# Vendor Evaluation Dashboard V2_Plan

How a schedule from MS Project changed from version to version. A marks actual dates.

## Version 1 (data date 2025-05-13, saved 2025-05-08, file Vendor Evaluation Dashboard V2_Plan_20250513.mpp)

| ID | WBS | Task | Duration | Start | Finish | Predecessors | Complete | Total float | Constraint |
| --- | --- | --- | --- | --- | --- | --- | --- | --- | --- |
| 1 | 1 | **Milestones** | 84d | 2025-04-30 A | 2025-09-03 |  |  | 0d |  |
| 2 |  | เสนอ Project Charter ให้ผู้บริหารอนุมัติ (Milestone #1) | 0d | 2025-04-30 A | 2025-04-30 A | 15 | 100% |  |  |
| 3 |  | ประชุม Kick off โครงการ เพื่อสื่อสารแผนงานโครงการ (Milestone #2) | 0d | 2025-05-02 A | 2025-05-02 A | 16 | 100% |  |  |
| 4 |  | อนุมัติและยืนยัน Requirement Specification (Milestone #3) | 0d | 2025-05-14 | 2025-05-14 | 51 |  | 76d |  |
| 5 |  | อนุมัติและยืนยัน Data Retention Sign-Off Form (Milestone #4) | 0d | 2025-05-15 | 2025-05-15 | 53 |  | 75d |  |
| 6 |  | ส่งมอบเอกสาร Business process risk management และเอกสารที่เกี่ยวข้อง (Milestone #5) | 0d | 2025-06-09 | 2025-06-09 | 60 |  | 59d |  |
| 7 |  | อนุมัติและยืนยัน Design Specification (Milestone #6) | 0d | 2025-06-09 | 2025-06-09 | 86 |  | 59d |  |
| 8 |  | ส่งมอบBPM Sign-off Draft Process Flow และเอกสารที่เกี่ยวข้อง (Milestone #7) | 0d | 2025-07-16 | 2025-07-16 | 185 |  | 33d |  |
| 9 |  | ส่งมอบระบบงานที่พัฒนาเรียบร้อยแล้ว (Milestone #8) | 0d | 2025-07-17 | 2025-07-17 | 186 |  | 32d |  |
| 10 |  | UAT Sign-off (Milestone #9) | 0d | 2025-08-01 | 2025-08-01 | 192 |  | 22d |  |
| 11 |  | ดำเนินการ Go-Live(Milestone #10) | 0d | 2025-08-06 | 2025-08-06 | 196 |  | 19d |  |
| 12 |  | ดำเนินการปิดโครงการ (Milestone #11) | 0d | 2025-09-03 | 2025-09-03 | 205 |  | 0d |  |
| 13 | 2 | **Project Preparation** | 13d | 2025-04-15 A | 2025-05-02 A |  | 100% |  |  |
| 14 |  | จัดทำ Project Charter | 11d | 2025-04-15 A | 2025-04-29 A |  | 100% |  |  |
| 15 |  | เสนอ Project Charter ให้ผู้บริหารอนุมัติ (Milestone #1) | 1d | 2025-04-30 A | 2025-04-30 A | 14 | 100% |  |  |
| 16 |  | ประชุม Kick off โครงการ เพื่อสื่อสารแผนงานโครงการ (Milestone #2) | 1d | 2025-05-02 A | 2025-05-02 A | 15 | 100% |  |  |
| 17 | 3 | **ประชุมติดตามความคืบหน้าของโครงการ (Weekly)** | 90d | 2025-04-16 A | 2025-08-27 |  | 20% | 5d |  |
| 18 |  | ประชุมติดตามความคืบหน้าของโครงการ (Weekly) 1 | 1d | 2025-04-16 A | 2025-04-16 A |  | 100% |  | start no earlier than 2025-04-16 |
| 19 |  | ประชุมติดตามความคืบหน้าของโครงการ (Weekly) 2 | 1d | 2025-04-23 A | 2025-04-23 A |  | 100% |  | start no earlier than 2025-04-23 |
| 20 |  | ประชุมติดตามความคืบหน้าของโครงการ (Weekly) 3 | 1d | 2025-04-30 A | 2025-04-30 A |  | 100% |  | start no earlier than 2025-04-30 |
| 21 |  | ประชุมติดตามความคืบหน้าของโครงการ (Weekly) 4 | 1d | 2025-05-07 A | 2025-05-07 A |  | 100% |  | start no earlier than 2025-05-07 |
| 22 |  | ประชุมติดตามความคืบหน้าของโครงการ (Weekly) 5 | 1d | 2025-05-14 | 2025-05-14 |  |  | 76d | start no earlier than 2025-05-14 |
| 23 |  | ประชุมติดตามความคืบหน้าของโครงการ (Weekly) 6 | 1d | 2025-05-21 | 2025-05-21 |  |  | 71d | start no earlier than 2025-05-21 |
| 24 |  | ประชุมติดตามความคืบหน้าของโครงการ (Weekly) 7 | 1d | 2025-05-28 | 2025-05-28 |  |  | 66d | start no earlier than 2025-05-28 |
| 25 |  | ประชุมติดตามความคืบหน้าของโครงการ (Weekly) 8 | 1d | 2025-06-04 | 2025-06-04 |  |  | 62d | start no earlier than 2025-06-04 |
| 26 |  | ประชุมติดตามความคืบหน้าของโครงการ (Weekly) 9 | 1d | 2025-06-11 | 2025-06-11 |  |  | 57d | start no earlier than 2025-06-11 |
| 27 |  | ประชุมติดตามความคืบหน้าของโครงการ (Weekly) 10 | 1d | 2025-06-18 | 2025-06-18 |  |  | 52d | start no earlier than 2025-06-18 |
| 28 |  | ประชุมติดตามความคืบหน้าของโครงการ (Weekly) 11 | 1d | 2025-06-25 | 2025-06-25 |  |  | 47d | start no earlier than 2025-06-25 |
| 29 |  | ประชุมติดตามความคืบหน้าของโครงการ (Weekly) 12 | 1d | 2025-07-02 | 2025-07-02 |  |  | 42d | start no earlier than 2025-07-02 |
| 30 |  | ประชุมติดตามความคืบหน้าของโครงการ (Weekly) 13 | 1d | 2025-07-09 | 2025-07-09 |  |  | 37d | start no earlier than 2025-07-09 |
| 31 |  | ประชุมติดตามความคืบหน้าของโครงการ (Weekly) 14 | 1d | 2025-07-16 | 2025-07-16 |  |  | 33d | start no earlier than 2025-07-16 |
| 32 |  | ประชุมติดตามความคืบหน้าของโครงการ (Weekly) 15 | 1d | 2025-07-23 | 2025-07-23 |  |  | 28d | start no earlier than 2025-07-23 |
| 33 |  | ประชุมติดตามความคืบหน้าของโครงการ (Weekly) 16 | 1d | 2025-07-30 | 2025-07-30 |  |  | 24d | start no earlier than 2025-07-30 |
| 34 |  | ประชุมติดตามความคืบหน้าของโครงการ (Weekly) 17 | 1d | 2025-08-06 | 2025-08-06 |  |  | 19d | start no earlier than 2025-08-06 |
| 35 |  | ประชุมติดตามความคืบหน้าของโครงการ (Weekly) 18 | 1d | 2025-08-13 | 2025-08-13 |  |  | 15d | start no earlier than 2025-08-13 |
| 36 |  | ประชุมติดตามความคืบหน้าของโครงการ (Weekly) 19 | 1d | 2025-08-20 | 2025-08-20 |  |  | 10d | start no earlier than 2025-08-20 |
| 37 |  | ประชุมติดตามความคืบหน้าของโครงการ (Weekly) 20 | 1d | 2025-08-27 | 2025-08-27 |  |  | 5d | start no earlier than 2025-08-27 |
| 38 | 4 | **รายงานความคืบหน้าของโครงการใน Tech.PMO (Monthly)** | 85d | 2025-04-25 A | 2025-08-29 |  | 20% | 3d |  |
| 39 |  | รายงานความคืบหน้าของโครงการใน Tech.PMO (Monthly) 1 | 1d | 2025-04-25 A | 2025-04-25 A |  | 100% |  | start no earlier than 2025-04-25 |
| 40 |  | รายงานความคืบหน้าของโครงการใน Tech.PMO (Monthly) 2 | 1d | 2025-05-30 | 2025-05-30 |  |  | 64d | start no earlier than 2025-05-30 |
| 41 |  | รายงานความคืบหน้าของโครงการใน Tech.PMO (Monthly) 3 | 1d | 2025-06-27 | 2025-06-27 |  |  | 45d | start no earlier than 2025-06-27 |
| 42 |  | รายงานความคืบหน้าของโครงการใน Tech.PMO (Monthly) 4 | 1d | 2025-07-25 | 2025-07-25 |  |  | 26d | start no earlier than 2025-07-25 |
| 43 |  | รายงานความคืบหน้าของโครงการใน Tech.PMO (Monthly) 5 | 1d | 2025-08-29 | 2025-08-29 |  |  | 3d | start no earlier than 2025-08-29 |
| 44 | 5 | **Requirement Gathering** | 7d | 2025-05-06 A | 2025-05-15 |  | 75% | 75d |  |
| 45 |  | ศึกษากระบวนการทำงานในปัจจุบัน (As Is) | 2d | 2025-05-06 A | 2025-05-07 A | 16FS+1d | 100% |  |  |
| 46 |  | ศึกษาปัญหาของการทำงานในปัจจุบัน | 2d | 2025-05-06 A | 2025-05-07 A | 45SS | 100% |  |  |
| 47 |  | จัดประชุมสัมภาษณ์ตัวแทนผู้ปฏิบัติงานเพื่อค้นหาความต้องการ (Interview Key Users) | 2d | 2025-05-06 A | 2025-05-07 A | 45SS | 100% |  |  |
| 48 |  | สรุปจัดทำรายละเอียดความต้องการ (Develop Requirement Specification) | 1d | 2025-05-08 A | 2025-05-08 A | 47 | 100% |  |  |
| 49 |  | ประชุมกับ User เพื่อสรุปยืนยัน Requirement | 1d | 2025-05-09 A | 2025-05-09 A | 48 | 100% |  |  |
| 50 |  | แก้ไขเอกสาร Requirement Specification #ครั้งที่ 1 | 1d | 2025-05-13 A | 2025-05-13 A | 49 | 100% |  |  |
| 51 |  | อนุมัติและยืนยัน Requirement Specification (Milestone #3) | 1d | 2025-05-14 | 2025-05-14 | 50 |  | 0d |  |
| 52 |  | กำหนดระยะเวลาการเก็บรักษาข้อมูล (Data Retention) | 1d | 2025-05-14 | 2025-05-14 | 51SS |  | 0d |  |
| 53 |  | อนุมัติและยืนยัน Data Retention Sign-Off Form (Milestone #4) | 1d | 2025-05-15 | 2025-05-15 | 52 |  | 0d |  |
| 54 | 6 | **Design** | 16d | 2025-05-16 | 2025-06-09 |  |  | 1d |  |
| 55 |  | ออกแบบสถาปัตยกรรมระบบ (Solution Architecture) | 4d | 2025-05-16 | 2025-05-21 | 53 |  | 64d |  |
| 56 |  | ออกแบบ Data Flow ของระบบงาน | 3d | 2025-05-22 | 2025-05-26 | 55 |  | 68d |  |
| 57 |  | ออกแบบโครงสร้างฐานข้อมูล (DB Structure and Schema) | 7d | 2025-05-22 | 2025-05-30 | 55 |  | 64d |  |
| 58 |  | Business process management and Business process risk management training for User | 2d | 2025-05-19 | 2025-05-20 | 53FS+1d |  | 0d |  |
| 59 |  | จัดทำเอกสาร Business process risk management | 12d | 2025-05-21 | 2025-06-06 | 58 |  | 0d |  |
| 60 |  | ส่งมอบเอกสาร Business process risk management และเอกสารที่เกี่ยวข้อง (Milestone #5) | 1d | 2025-06-09 | 2025-06-09 | 59 |  | 0d |  |
| 61 | 6.7 | **กลุ่มงาน IT** | 1d | 2025-05-28 | 2025-05-28 |  |  | 33d |  |
| 62 |  | ออกแบบแบบฟอร์มการประเมินคุณภาพการส่งมอบสินค้า/บริการ (For IT User) | 1d | 2025-05-28 | 2025-05-28 | 53FS+8d |  | 33d |  |
| 63 | 6.8 | **กลุ่มงาน WASTE** | 1d | 2025-05-28 | 2025-05-28 |  |  | 66d |  |
| 64 |  | ออกแบบแบบฟอร์มการประเมินคุณภาพการส่งมอบสินค้า/บริการ WASTE | 1d | 2025-05-28 | 2025-05-28 | 62SS |  | 66d |  |
| 65 | 6.9 | **กลุ่มงาน Logistic** | 1d | 2025-05-28 | 2025-05-28 |  |  | 66d |  |
| 66 |  | ออกแบบแบบฟอร์มการประเมินคุณภาพการส่งมอบสินค้า/บริการ Vendor-N (G.Logistics) | 1d | 2025-05-28 | 2025-05-28 | 62SS |  | 66d |  |
| 67 | 6.10 | **กลุ่มงาน Manufacturing** | 1d | 2025-05-28 | 2025-05-28 |  |  | 66d |  |
| 68 |  | ออกแบบแบบฟอร์มการประเมินคุณภาพการส่งมอบสินค้า/บริการ Manufacturing_N | 1d | 2025-05-28 | 2025-05-28 | 62SS |  | 66d |  |
| 69 | 6.11 | **กลุ่มงาน Commercial** | 1d | 2025-05-28 | 2025-05-28 |  |  | 66d |  |
| 70 |  | ออกแบบแบบฟอร์มการประเมินคุณภาพการส่งมอบสินค้า/บริการ Commercial | 1d | 2025-05-28 | 2025-05-28 | 62SS |  | 66d |  |

| ID | WBS | Task | Duration | Start | Finish | Predecessors | Total float |
| --- | --- | --- | --- | --- | --- | --- | --- |
| 71 | 6.12 | **กลุ่มงาน Outsource** | 1d | 2025-05-28 | 2025-05-28 |  | 33d |
| 72 |  | ออกแบบแบบฟอร์มการประเมินคุณภาพการส่งมอบสินค้า/บริการ (Outsource) | 1d | 2025-05-28 | 2025-05-28 | 62SS | 33d |
| 73 | 6.13 | **กลุ่มงาน Raw material** | 1d | 2025-05-29 | 2025-05-29 |  | 33d |
| 74 |  | ออกแบบแบบฟอร์มการประเมินคุณภาพการส่งมอบสินค้า/บริการ (RAW MATERIAL) | 1d | 2025-05-29 | 2025-05-29 | 72 | 33d |
| 75 | 6.14 | **กลุ่มงาน Packaging** | 1d | 2025-05-29 | 2025-05-29 |  | 33d |
| 76 |  | ออกแบบแบบฟอร์มการประเมินคุณภาพการส่งมอบสินค้า/บริการ (PKG) | 1d | 2025-05-29 | 2025-05-29 | 74SS | 33d |
| 77 | 6.15 | **กลุ่มงาน Agile** | 1d | 2025-05-30 | 2025-05-30 |  | 33d |
| 78 |  | ออกแบบแบบฟอร์มการประเมินคุณภาพการส่งมอบสินค้า/บริการ (AGILE) | 1d | 2025-05-30 | 2025-05-30 | 76 | 33d |
| 79 | 6.16 | **กลุ่มงาน Property** | 1d | 2025-05-30 | 2025-05-30 |  | 64d |
| 80 |  | ออกแบบแบบฟอร์มการประเมินคุณภาพการส่งมอบสินค้า/บริการ (PROPERTY) | 1d | 2025-05-30 | 2025-05-30 | 78SS | 64d |
| 81 | 6.17 | **กลุ่มงาน Energy and Chemical** | 1d | 2025-05-30 | 2025-05-30 |  | 33d |
| 82 |  | ออกแบบแบบฟอร์มการประเมินคุณภาพการส่งมอบสินค้า/บริการ (ENERGY_CHEMICAL) | 1d | 2025-05-30 | 2025-05-30 | 78SS | 33d |
| 83 |  | จัดทำรายละเอียดการออกแบบระบบ (Design Specification) | 2d | 2025-06-02 | 2025-06-04 | 82 | 33d |
| 84 |  | ประชุมกับ Key User เพื่อสรุปยืนยัน Design Specification | 1d | 2025-06-05 | 2025-06-05 | 83 | 33d |
| 85 |  | Key User ตรวจสอบยืนยัน Design Specification | 1d | 2025-06-06 | 2025-06-06 | 84 | 33d |
| 86 |  | อนุมัติและยืนยัน Design Specification (Milestone #6) | 1d | 2025-06-09 | 2025-06-09 | 85 | 33d |
| 87 | 7 | **Implementation & UT** | 31d | 2025-06-04 | 2025-07-17 |  | 0d |
| 88 | 7.1 | **พัฒนาแบบประเมินบน Microsoft Form** | 2d | 2025-06-10 | 2025-06-11 |  | 33d |
| 89 | 7.1.1 | **กลุ่มงาน IT** | 1d | 2025-06-10 | 2025-06-10 |  | 33d |
| 90 |  | พัฒนาแบบฟอร์มการประเมินคุณภาพการส่งมอบสินค้า/บริการ (For IT User) | 1d | 2025-06-10 | 2025-06-10 | 86 | 33d |
| 91 |  | ทดสอบแบบฟอร์มการประเมินคุณภาพการส่งมอบสินค้า/บริการ (For IT User) | 1d | 2025-06-10 | 2025-06-10 | 90SS | 57d |
| 92 | 7.1.2 | **กลุ่มงาน WASTE** | 1d | 2025-06-10 | 2025-06-10 |  | 58d |
| 93 |  | พัฒนาแบบฟอร์มการประเมินคุณภาพการส่งมอบสินค้า/บริการ WASTE | 1d | 2025-06-10 | 2025-06-10 | 90SS | 58d |
| 94 |  | ทดสอบแบบฟอร์มการประเมินคุณภาพการส่งมอบสินค้า/บริการ (For IT User) | 1d | 2025-06-10 | 2025-06-10 | 90SS | 58d |
| 95 | 7.1.3 | **กลุ่มงาน Logistic** | 1d | 2025-06-10 | 2025-06-10 |  | 58d |
| 96 |  | พัฒนาแบบฟอร์มการประเมินคุณภาพการส่งมอบสินค้า/บริการ Vendor-N (G.Logistics) | 1d | 2025-06-10 | 2025-06-10 | 90SS | 58d |
| 97 |  | ทดสอบแบบฟอร์มการประเมินคุณภาพการส่งมอบสินค้า/บริการ Vendor-N (G.Logistics) | 1d | 2025-06-10 | 2025-06-10 | 90SS | 58d |
| 98 | 7.1.4 | **กลุ่มงาน Manufacturing** | 1d | 2025-06-10 | 2025-06-10 |  | 58d |
| 99 |  | พัฒนาแบบฟอร์มการประเมินคุณภาพการส่งมอบสินค้า/บริการ Manufacturing_N | 1d | 2025-06-10 | 2025-06-10 | 90SS | 58d |
| 100 |  | ทดสอบแบบฟอร์มการประเมินคุณภาพการส่งมอบสินค้า/บริการ Manufacturing_N | 1d | 2025-06-10 | 2025-06-10 | 90SS | 58d |
| 101 | 7.1.5 | **กลุ่มงาน Commercial** | 1d | 2025-06-10 | 2025-06-10 |  | 58d |
| 102 |  | พัฒนาแบบฟอร์มการประเมินคุณภาพการส่งมอบสินค้า/บริการ Commercial | 1d | 2025-06-10 | 2025-06-10 | 90SS | 58d |
| 103 |  | ทดสอบแบบฟอร์มการประเมินคุณภาพการส่งมอบสินค้า/บริการ Commercial | 1d | 2025-06-10 | 2025-06-10 | 90SS | 58d |
| 104 | 7.1.6 | **กลุ่มงาน Outsource** | 1d | 2025-06-10 | 2025-06-10 |  | 33d |
| 105 |  | พัฒนาแบบฟอร์มการประเมินคุณภาพการส่งมอบสินค้า/บริการ (Outsource) | 1d | 2025-06-10 | 2025-06-10 | 90SS | 58d |
| 106 |  | ทดสอบแบบฟอร์มการประเมินคุณภาพการส่งมอบสินค้า/บริการ (Outsource) | 1d | 2025-06-10 | 2025-06-10 | 90SS | 33d |
| 107 | 7.1.7 | **กลุ่มงาน Raw material** | 1d | 2025-06-11 | 2025-06-11 |  | 33d |
| 108 |  | พัฒนาแบบฟอร์มการประเมินคุณภาพการส่งมอบสินค้า/บริการ RAW MATERIAL | 1d | 2025-06-11 | 2025-06-11 | 106 | 33d |
| 109 |  | ทดสอบแบบฟอร์มการประเมินคุณภาพการส่งมอบสินค้า/บริการ RAW MATERIAL | 1d | 2025-06-11 | 2025-06-11 | 108SS | 33d |
| 110 | 7.1.8 | **กลุ่มงาน Packaging** | 1d | 2025-06-11 | 2025-06-11 |  | 57d |
| 111 |  | พัฒนาแบบฟอร์มการประเมินคุณภาพการส่งมอบสินค้า/บริการ PKG | 1d | 2025-06-11 | 2025-06-11 | 108SS | 57d |
| 112 |  | ทดสอบแบบฟอร์มการประเมินคุณภาพการส่งมอบสินค้า/บริการ PKG | 1d | 2025-06-11 | 2025-06-11 | 108SS | 57d |
| 113 | 7.1.9 | **กลุ่มงาน Agile** | 1d | 2025-06-11 | 2025-06-11 |  | 57d |
| 114 |  | พัฒนาแบบฟอร์มการประเมินคุณภาพการส่งมอบสินค้า/บริการ AGILE | 1d | 2025-06-11 | 2025-06-11 | 108SS | 57d |
| 115 |  | ทดสอบแบบฟอร์มการประเมินคุณภาพการส่งมอบสินค้า/บริการ AGILE | 1d | 2025-06-11 | 2025-06-11 | 108SS | 57d |
| 116 | 7.1.10 | **กลุ่มงาน Property** | 1d | 2025-06-11 | 2025-06-11 |  | 57d |
| 117 |  | พัฒนาแบบฟอร์มการประเมินคุณภาพการส่งมอบสินค้า/บริการ PROPERTY | 1d | 2025-06-11 | 2025-06-11 | 108SS | 57d |
| 118 |  | ทดสอบแบบฟอร์มการประเมินคุณภาพการส่งมอบสินค้า/บริการ PROPERTY | 1d | 2025-06-11 | 2025-06-11 | 108SS | 57d |
| 119 | 7.1.11 | **กลุ่มงาน Energy and Chemical** | 1d | 2025-06-11 | 2025-06-11 |  | 57d |
| 120 |  | พัฒนาแบบฟอร์มการประเมินคุณภาพการส่งมอบสินค้า/บริการ ENERGY_CHEMICAL | 1d | 2025-06-11 | 2025-06-11 | 108SS | 57d |
| 121 |  | ทดสอบแบบฟอร์มการประเมินคุณภาพการส่งมอบสินค้า/บริการ ENERGY_CHEMICAL | 1d | 2025-06-11 | 2025-06-11 | 108SS | 57d |
| 122 | 7.2 | **พัฒนาแบบประเมินของกลุ่มงาน IT** | 1d | 2025-06-11 | 2025-06-11 |  | 57d |
| 123 |  | พัฒนา Flow แบบประเมินคุณภาพการส่งมอบสินค้า/บริการ (For IT User) บน Power Automate | 1d | 2025-06-11 | 2025-06-11 | 91 | 57d |
| 124 |  | ทดสอบการเชื่อมต่อระหว่าง Microsoft Form และ Power Automate | 1d | 2025-06-11 | 2025-06-11 | 123SS | 57d |
| 125 |  | พัฒนา List สำหรับจัดเก็บข้อมูลแบบประเมินคุณภาพการส่งมอบสินค้า/บริการ (For IT User) บน Sharepoint | 1d | 2025-06-11 | 2025-06-11 | 123SS | 57d |
| 126 |  | ทดสอบการเชื่อมต่อระหว่าง Microsoft Form ,Power Automate และ Sharepoint List | 1d | 2025-06-11 | 2025-06-11 | 123SS | 57d |
| 127 | 7.3 | **พัฒนาแบบประเมินของกลุ่มงาน WASTE** | 1d | 2025-06-11 | 2025-06-11 |  | 57d |
| 128 |  | พัฒนา Flow แบบประเมินคุณภาพการส่งมอบสินค้า/บริการ WASTE บน Power Automate | 1d | 2025-06-11 | 2025-06-11 | 123SS | 57d |
| 129 |  | ทดสอบการเชื่อมต่อระหว่าง Microsoft Form และ Power Automate | 1d | 2025-06-11 | 2025-06-11 | 123SS | 57d |
| 130 |  | พัฒนา List สำหรับจัดเก็บข้อมูลแบบประเมินคุณภาพการส่งมอบสินค้า/บริการ WASTE บน Sharepoint | 1d | 2025-06-11 | 2025-06-11 | 123SS | 57d |
| 131 |  | ทดสอบการเชื่อมต่อระหว่าง Microsoft Form ,Power Automate และ Sharepoint List | 1d | 2025-06-11 | 2025-06-11 | 123SS | 57d |
| 132 | 7.4 | **พัฒนาแบบประเมินของกลุ่มงาน Logistic** | 1d | 2025-06-11 | 2025-06-11 |  | 57d |
| 133 |  | พัฒนา Flow แบบประเมินคุณภาพการส่งมอบสินค้า/บริการ Vendor-N (G.Logistics) บน Power Automate | 1d | 2025-06-11 | 2025-06-11 | 123SS | 57d |
| 134 |  | ทดสอบการเชื่อมต่อระหว่าง Microsoft Form และ Power Automate | 1d | 2025-06-11 | 2025-06-11 | 123SS | 57d |
| 135 |  | พัฒนา List สำหรับจัดเก็บข้อมูลแบบประเมินคุณภาพการส่งมอบสินค้า/บริการ Vendor-N (G.Logistics) บน Sharepoint | 1d | 2025-06-11 | 2025-06-11 | 123SS | 57d |
| 136 |  | ทดสอบการเชื่อมต่อระหว่าง Microsoft Form ,Power Automate และ Sharepoint List | 1d | 2025-06-11 | 2025-06-11 | 123SS | 57d |
| 137 | 7.5 | **พัฒนาแบบประเมินของกลุ่มงาน Manufaturing** | 1d | 2025-06-11 | 2025-06-11 |  | 57d |
| 138 |  | พัฒนา Flow แบบประเมินคุณภาพการส่งมอบสินค้า/บริการ Manufacturing_N บน Power Automate | 1d | 2025-06-11 | 2025-06-11 | 123SS | 57d |
| 139 |  | ทดสอบการเชื่อมต่อระหว่าง Microsoft Form และ Power Automate | 1d | 2025-06-11 | 2025-06-11 | 123SS | 57d |
| 140 |  | พัฒนา List สำหรับจัดเก็บข้อมูลแบบประเมินคุณภาพการส่งมอบสินค้า/บริการ Manufacturing_N บน Sharepoint | 1d | 2025-06-11 | 2025-06-11 | 123SS | 57d |

| ID | WBS | Task | Duration | Start | Finish | Predecessors | Total float |
| --- | --- | --- | --- | --- | --- | --- | --- |
| 141 |  | ทดสอบการเชื่อมต่อระหว่าง Microsoft Form ,Power Automate และ Sharepoint List | 1d | 2025-06-11 | 2025-06-11 | 123SS | 57d |
| 142 | 7.6 | **พัฒนาแบบประเมินของกลุ่มงาน Commercial** | 1d | 2025-06-11 | 2025-06-11 |  | 57d |
| 143 |  | พัฒนา Flow แบบประเมินคุณภาพการส่งมอบสินค้า/บริการ Commercial บน Power Automate | 1d | 2025-06-11 | 2025-06-11 | 123SS | 57d |
| 144 |  | ทดสอบการเชื่อมต่อระหว่าง Microsoft Form และ Power Automate | 1d | 2025-06-11 | 2025-06-11 | 123SS | 57d |
| 145 |  | พัฒนา List สำหรับจัดเก็บข้อมูลแบบประเมินคุณภาพการส่งมอบสินค้า/บริการ Commercial บน Sharepoint | 1d | 2025-06-11 | 2025-06-11 | 123SS | 57d |
| 146 |  | ทดสอบการเชื่อมต่อระหว่าง Microsoft Form ,Power Automate และ Sharepoint List | 1d | 2025-06-11 | 2025-06-11 | 123SS | 57d |
| 147 | 7.7 | **พัฒนาแบบประเมินของกลุ่มงาน Outsource** | 1d | 2025-06-11 | 2025-06-11 |  | 57d |
| 148 |  | พัฒนา Flow แบบประเมินคุณภาพการส่งมอบสินค้า/บริการ (Outsource) บน Power Automate | 1d | 2025-06-11 | 2025-06-11 | 123SS | 57d |
| 149 |  | ทดสอบการเชื่อมต่อระหว่าง Microsoft Form และ Power Automate | 1d | 2025-06-11 | 2025-06-11 | 123SS | 57d |
| 150 |  | พัฒนา List สำหรับจัดเก็บข้อมูลแบบประเมินคุณภาพการส่งมอบสินค้า/บริการ (Outsource) บน Sharepoint | 1d | 2025-06-11 | 2025-06-11 | 123SS | 57d |
| 151 |  | ทดสอบการเชื่อมต่อระหว่าง Microsoft Form ,Power Automate และ Sharepoint List | 1d | 2025-06-11 | 2025-06-11 | 123SS | 57d |
| 152 | 7.8 | **พัฒนาแบบประเมินของกลุ่มงาน Raw material** | 1d | 2025-06-12 | 2025-06-12 |  | 33d |
| 153 |  | พัฒนา Flow แบบประเมินคุณภาพการส่งมอบสินค้า/บริการ RAW MATERIAL บน Power Automate | 1d | 2025-06-12 | 2025-06-12 | 109 | 33d |
| 154 |  | ทดสอบการเชื่อมต่อระหว่าง Microsoft Form และ Power Automate | 1d | 2025-06-12 | 2025-06-12 | 153SS | 56d |
| 155 |  | พัฒนา List สำหรับจัดเก็บข้อมูลแบบประเมินคุณภาพการส่งมอบสินค้า/บริการ RAW MATERIAL บน Sharepoint | 1d | 2025-06-12 | 2025-06-12 | 153SS | 56d |
| 156 |  | ทดสอบการเชื่อมต่อระหว่าง Microsoft Form ,Power Automate และ Sharepoint List | 1d | 2025-06-12 | 2025-06-12 | 153SS | 56d |
| 157 | 7.9 | **พัฒนาแบบประเมินของกลุ่มงาน Packaging** | 1d | 2025-06-12 | 2025-06-12 |  | 56d |
| 158 |  | พัฒนา Flow แบบประเมินคุณภาพการส่งมอบสินค้า/บริการ PKG บน Power Automate | 1d | 2025-06-12 | 2025-06-12 | 153SS | 56d |
| 159 |  | ทดสอบการเชื่อมต่อระหว่าง Microsoft Form และ Power Automate | 1d | 2025-06-12 | 2025-06-12 | 153SS | 56d |
| 160 |  | พัฒนา List สำหรับจัดเก็บข้อมูลแบบประเมินคุณภาพการส่งมอบสินค้า/บริการ PKG บน Sharepoint | 1d | 2025-06-12 | 2025-06-12 | 153SS | 56d |
| 161 |  | ทดสอบการเชื่อมต่อระหว่าง Microsoft Form ,Power Automate และ Sharepoint List | 1d | 2025-06-12 | 2025-06-12 | 153SS | 56d |
| 162 | 7.10 | **พัฒนาแบบประเมินของกลุ่มงาน Agile** | 1d | 2025-06-12 | 2025-06-12 |  | 56d |
| 163 |  | พัฒนา Flow แบบประเมินคุณภาพการส่งมอบสินค้า/บริการ AGILE บน Power Automate | 1d | 2025-06-12 | 2025-06-12 | 153SS | 56d |
| 164 |  | ทดสอบการเชื่อมต่อระหว่าง Microsoft Form และ Power Automate | 1d | 2025-06-12 | 2025-06-12 | 153SS | 56d |
| 165 |  | พัฒนา List สำหรับจัดเก็บข้อมูลแบบประเมินคุณภาพการส่งมอบสินค้า/บริการ AGILE บน Sharepoint | 1d | 2025-06-12 | 2025-06-12 | 153SS | 56d |
| 166 |  | ทดสอบการเชื่อมต่อระหว่าง Microsoft Form ,Power Automate และ Sharepoint List | 1d | 2025-06-12 | 2025-06-12 | 153SS | 56d |
| 167 | 7.11 | **พัฒนาแบบประเมินของกลุ่มงาน Property** | 1d | 2025-06-12 | 2025-06-12 |  | 56d |
| 168 |  | พัฒนา Flow แบบประเมินคุณภาพการส่งมอบสินค้า/บริการ PROPERTY บน Power Automate | 1d | 2025-06-12 | 2025-06-12 | 153SS | 56d |
| 169 |  | ทดสอบการเชื่อมต่อระหว่าง Microsoft Form และ Power Automate | 1d | 2025-06-12 | 2025-06-12 | 153SS | 56d |
| 170 |  | พัฒนา List สำหรับจัดเก็บข้อมูลแบบประเมินคุณภาพการส่งมอบสินค้า/บริการ PROPERTY บน Sharepoint | 1d | 2025-06-12 | 2025-06-12 | 153SS | 56d |
| 171 |  | ทดสอบการเชื่อมต่อระหว่าง Microsoft Form ,Power Automate และ Sharepoint List | 1d | 2025-06-12 | 2025-06-12 | 153SS | 56d |
| 172 | 7.12 | **พัฒนาแบบประเมินของกลุ่มงาน Energy and Chemical** | 1d | 2025-06-12 | 2025-06-12 |  | 33d |
| 173 |  | พัฒนา Flow แบบประเมินคุณภาพการส่งมอบสินค้า/บริการ ENERGY_CHEMICAL บน Power Automate | 1d | 2025-06-12 | 2025-06-12 | 153SS | 56d |
| 174 |  | ทดสอบการเชื่อมต่อระหว่าง Microsoft Form และ Power Automate | 1d | 2025-06-12 | 2025-06-12 | 153SS | 56d |
| 175 |  | พัฒนา List สำหรับจัดเก็บข้อมูลแบบประเมินคุณภาพการส่งมอบสินค้า/บริการ ENERGY_CHEMICAL บน Sharepoint | 1d | 2025-06-12 | 2025-06-12 | 153SS | 56d |
| 176 |  | ทดสอบการเชื่อมต่อระหว่าง Microsoft Form ,Power Automate และ Sharepoint List | 1d | 2025-06-12 | 2025-06-12 | 153SS | 33d |
| 177 |  | พัฒนาโปรแกรมสำหรับดึงข้อมูลจาก Sharepoint List เก็บลง Database | 2d | 2025-06-13 | 2025-06-16 | 176 | 33d |
| 178 |  | ทดสอบการเชื่อมต่อโปรแกรมระหว่าง Sharepoint List และ Database | 2d | 2025-06-17 | 2025-06-18 | 177 | 33d |
| 179 |  | พัฒนา Model ใช้สำหรับนำไปแสดงผลรายงาน | 14d | 2025-06-19 | 2025-07-08 | 178 | 33d |
| 180 |  | พัฒนา Dashboard | 5d | 2025-07-09 | 2025-07-16 | 179 | 33d |
| 181 | 7.17 | **จัดทำ Draft Process flow และเอกสารที่เกี่ยวข้อง รองรับกระบวนการใหม่** | 30d | 2025-06-04 | 2025-07-16 |  | 0d |
| 182 |  | จัดทำเอกสาร Business Process Flow | 24d | 2025-06-04 | 2025-07-07 | 60FS-4d | 0d |
| 183 |  | ส่งมอบ UPM Sign-off และ Draf of ARIS Flow ให้กับหน่วยงาน BPM | 3d | 2025-07-08 | 2025-07-11 | 182 | 0d |
| 184 |  | จัดเก็บเอกสารเข้าระบบ ISO และส่งมอบเอกสารให้หน่วยงาน BPM | 2d | 2025-07-14 | 2025-07-15 | 183 | 0d |
| 185 |  | ส่งมอบBPM Sign-off Draft Process Flow และเอกสารที่เกี่ยวข้อง (Milestone #7) | 1d | 2025-07-16 | 2025-07-16 | 184 | 0d |
| 186 |  | ส่งมอบระบบงานที่พัฒนาเรียบร้อยแล้ว (Milestone #8) | 1d | 2025-07-17 | 2025-07-17 | 185 | 0d |
| 187 | 8 | **Test And Trainning Key User** | 10d | 2025-07-18 | 2025-08-01 |  | 0d |
| 188 |  | จัดเตรียม Environment Test | 1d | 2025-07-18 | 2025-07-18 | 186 | 0d |
| 189 |  | จัดทำเอกสารการฝึกอบรมสำหรับ Key User (Trainng Document) | 1d | 2025-07-21 | 2025-07-21 | 188 | 0d |
| 190 |  | ดำเนินการทดสอบ UAT และ Training | 5d | 2025-07-22 | 2025-07-29 | 189 | 0d |
| 191 |  | แก้ไข Defect จาก UAT | 2d | 2025-07-30 | 2025-07-31 | 190 | 0d |
| 192 |  | UAT Sign-off (Milestone #9) | 1d | 2025-08-01 | 2025-08-01 | 191 | 0d |
| 193 | 9 | **Deploy** | 3d | 2025-08-04 | 2025-08-06 |  | 0d |
| 194 |  | จัดทำแผน Go-Live Plan | 1d | 2025-08-04 | 2025-08-04 | 192 | 0d |
| 195 |  | ตรวจสอบความพร้อมในการ Go-Live (Go/No-Go Checklist) | 1d | 2025-08-05 | 2025-08-05 | 194 | 0d |
| 196 |  | ดำเนินการ Go-Live(Milestone #10) | 1d | 2025-08-06 | 2025-08-06 | 195 | 0d |
| 197 | 10 | **Stabilization** | 15d | 2025-08-07 | 2025-08-28 |  | 0d |
| 198 |  | สนับสนุนการใช้งาน หลัง Go-Live (หลังจบโครงการ 1 Month) | 15d | 2025-08-07 | 2025-08-28 | 196 | 0d |
| 199 |  | เก็บ Issues Log บน ระบบจริงที่ใช้งาน และแก้ไข | 14d | 2025-08-07 | 2025-08-27 | 198SS | 0d |
| 200 | 11 | **Project Closure** | 5d | 2025-08-28 | 2025-09-03 |  | 0d |
| 201 |  | จัดทำ Lesson Learned โครงการ | 1d | 2025-08-28 | 2025-08-28 | 199 | 0d |
| 202 |  | ส่งมอบโครงการ สู่งานประจำ (Handover) | 1d | 2025-08-29 | 2025-08-29 | 201 | 0d |
| 203 |  | จัดเก็บเอกสาร Project Files ทั้งหมด | 1d | 2025-09-01 | 2025-09-01 | 202 | 0d |
| 204 |  | กำหนดระยะเวลาในการวัด Outcome ของโครงการ (Project KPI) | 1d | 2025-09-02 | 2025-09-02 | 203 | 0d |
| 205 |  | ดำเนินการปิดโครงการ (Milestone #11) | 1d | 2025-09-03 | 2025-09-03 | 204 | 0d |

## Version 2 (data date 2025-05-20, saved 2025-05-19, file Vendor Evaluation Dashboard V2_Plan_20250520.mpp)

Last finish stays 2025-09-03. Complete tasks 16 → 23.

Changed:

| ID | Task | Start | Finish | Complete | Total float |
| --- | --- | --- | --- | --- | --- |
| 4 | อนุมัติและยืนยัน Requirement Specification (Milestone #3) | 2025-05-14 A | 2025-05-14 A | 0% → 100% | 76d → none |
| 5 | อนุมัติและยืนยัน Data Retention Sign-Off Form (Milestone #4) | 2025-05-15 A | 2025-05-15 A | 0% → 100% | 75d → none |
| 17 | **ประชุมติดตามความคืบหน้าของโครงการ (Weekly)** |  |  | 20% → 25% |  |
| 22 | ประชุมติดตามความคืบหน้าของโครงการ (Weekly) 5 | 2025-05-14 A | 2025-05-14 A | 0% → 100% | 76d → none |
| 44 | **Requirement Gathering** |  | 2025-05-15 A | 75% → 100% | 75d → none |
| 51 | อนุมัติและยืนยัน Requirement Specification (Milestone #3) | 2025-05-14 A | 2025-05-14 A | 0% → 100% | 0d → none |
| 52 | กำหนดระยะเวลาการเก็บรักษาข้อมูล (Data Retention) | 2025-05-14 A | 2025-05-14 A | 0% → 100% | 0d → none |
| 53 | อนุมัติและยืนยัน Data Retention Sign-Off Form (Milestone #4) | 2025-05-15 A | 2025-05-15 A | 0% → 100% | 0d → none |
| 54 | **Design** | 2025-05-16 A |  | 0% → 11% | 1d → 59d |
| 55 | ออกแบบสถาปัตยกรรมระบบ (Solution Architecture) | 2025-05-16 A |  | 0% → 75% |  |
| 58 | Business process management and Business process risk management training for User | 2025-05-19 A | 2025-05-20 A | 0% → 100% | 0d → none |

## Version 3 (data date 2025-06-03, saved 2025-06-02, file Vendor Evaluation Dashboard V2_Plan_20250603.mpp)

Last finish stays 2025-09-03. Complete tasks 23 → 40.

Changed:

| ID | Task | Start | Finish | Complete | Total float |
| --- | --- | --- | --- | --- | --- |
| 17 | **ประชุมติดตามความคืบหน้าของโครงการ (Weekly)** |  |  | 25% → 35% |  |
| 23 | ประชุมติดตามความคืบหน้าของโครงการ (Weekly) 6 | 2025-05-21 A | 2025-05-21 A | 0% → 100% | 71d → none |
| 24 | ประชุมติดตามความคืบหน้าของโครงการ (Weekly) 7 | 2025-05-28 A | 2025-05-28 A | 0% → 100% | 66d → none |
| 38 | **รายงานความคืบหน้าของโครงการใน Tech.PMO (Monthly)** |  |  | 20% → 40% |  |
| 40 | รายงานความคืบหน้าของโครงการใน Tech.PMO (Monthly) 2 | 2025-05-30 A | 2025-05-30 A | 0% → 100% | 64d → none |
| 54 | **Design** |  |  | 11% → 82% |  |
| 55 | ออกแบบสถาปัตยกรรมระบบ (Solution Architecture) |  | 2025-05-21 A | 75% → 100% | 64d → none |
| 56 | ออกแบบ Data Flow ของระบบงาน | 2025-05-22 A | 2025-05-26 A | 0% → 100% | 68d → none |
| 57 | ออกแบบโครงสร้างฐานข้อมูล (DB Structure and Schema) | 2025-05-22 A | 2025-05-30 A | 0% → 100% | 64d → none |
| 59 | จัดทำเอกสาร Business process risk management | 2025-05-21 A |  | 0% → 75% |  |
| 61 | **กลุ่มงาน IT** | 2025-05-28 A | 2025-05-28 A | 0% → 100% | 33d → none |
| 62 | ออกแบบแบบฟอร์มการประเมินคุณภาพการส่งมอบสินค้า/บริการ (For IT User) | 2025-05-28 A | 2025-05-28 A | 0% → 100% | 33d → none |
| 63 | **กลุ่มงาน WASTE** | 2025-05-28 A | 2025-05-28 A | 0% → 100% | 66d → none |
| 64 | ออกแบบแบบฟอร์มการประเมินคุณภาพการส่งมอบสินค้า/บริการ WASTE | 2025-05-28 A | 2025-05-28 A | 0% → 100% | 66d → none |
| 65 | **กลุ่มงาน Logistic** | 2025-05-28 A | 2025-05-28 A | 0% → 100% | 66d → none |
| 66 | ออกแบบแบบฟอร์มการประเมินคุณภาพการส่งมอบสินค้า/บริการ Vendor-N (G.Logistics) | 2025-05-28 A | 2025-05-28 A | 0% → 100% | 66d → none |
| 67 | **กลุ่มงาน Manufacturing** | 2025-05-28 A | 2025-05-28 A | 0% → 100% | 66d → none |
| 68 | ออกแบบแบบฟอร์มการประเมินคุณภาพการส่งมอบสินค้า/บริการ Manufacturing_N | 2025-05-28 A | 2025-05-28 A | 0% → 100% | 66d → none |
| 69 | **กลุ่มงาน Commercial** | 2025-05-28 A | 2025-05-28 A | 0% → 100% | 66d → none |
| 70 | ออกแบบแบบฟอร์มการประเมินคุณภาพการส่งมอบสินค้า/บริการ Commercial | 2025-05-28 A | 2025-05-28 A | 0% → 100% | 66d → none |
| 71 | **กลุ่มงาน Outsource** | 2025-05-28 A | 2025-05-28 A | 0% → 100% | 33d → none |
| 72 | ออกแบบแบบฟอร์มการประเมินคุณภาพการส่งมอบสินค้า/บริการ (Outsource) | 2025-05-28 A | 2025-05-28 A | 0% → 100% | 33d → none |
| 73 | **กลุ่มงาน Raw material** | 2025-05-29 A | 2025-05-29 A | 0% → 100% | 33d → none |
| 74 | ออกแบบแบบฟอร์มการประเมินคุณภาพการส่งมอบสินค้า/บริการ (RAW MATERIAL) | 2025-05-29 A | 2025-05-29 A | 0% → 100% | 33d → none |
| 75 | **กลุ่มงาน Packaging** | 2025-05-29 A | 2025-05-29 A | 0% → 100% | 33d → none |
| 76 | ออกแบบแบบฟอร์มการประเมินคุณภาพการส่งมอบสินค้า/บริการ (PKG) | 2025-05-29 A | 2025-05-29 A | 0% → 100% | 33d → none |
| 77 | **กลุ่มงาน Agile** | 2025-05-30 A | 2025-05-30 A | 0% → 100% | 33d → none |
| 78 | ออกแบบแบบฟอร์มการประเมินคุณภาพการส่งมอบสินค้า/บริการ (AGILE) | 2025-05-30 A | 2025-05-30 A | 0% → 100% | 33d → none |
| 79 | **กลุ่มงาน Property** | 2025-05-30 A | 2025-05-30 A | 0% → 100% | 64d → none |
| 80 | ออกแบบแบบฟอร์มการประเมินคุณภาพการส่งมอบสินค้า/บริการ (PROPERTY) | 2025-05-30 A | 2025-05-30 A | 0% → 100% | 64d → none |
| 81 | **กลุ่มงาน Energy and Chemical** | 2025-05-30 A | 2025-05-30 A | 0% → 100% | 33d → none |
| 82 | ออกแบบแบบฟอร์มการประเมินคุณภาพการส่งมอบสินค้า/บริการ (ENERGY_CHEMICAL) | 2025-05-30 A | 2025-05-30 A | 0% → 100% | 33d → none |
| 83 | จัดทำรายละเอียดการออกแบบระบบ (Design Specification) | 2025-06-02 A |  | 0% → 50% |  |

## Version 4 (data date 2025-06-10, saved 2025-06-09, file Vendor Evaluation Dashboard V2_Plan_20250610.mpp)

Last finish stays 2025-09-03. Complete tasks 40 → 61.

Changed:

| ID | Task | Start | Finish | Complete | Total float |
| --- | --- | --- | --- | --- | --- |
| 6 | ส่งมอบเอกสาร Business process risk management และเอกสารที่เกี่ยวข้อง (Milestone #5) | 2025-06-09 A | 2025-06-09 A | 0% → 100% | 59d → none |
| 7 | อนุมัติและยืนยัน Design Specification (Milestone #6) | 2025-06-09 A | 2025-06-09 A | 0% → 100% | 59d → none |
| 17 | **ประชุมติดตามความคืบหน้าของโครงการ (Weekly)** |  |  | 35% → 40% |  |
| 25 | ประชุมติดตามความคืบหน้าของโครงการ (Weekly) 8 | 2025-06-04 A | 2025-06-04 A | 0% → 100% | 62d → none |
| 54 | **Design** |  | 2025-06-09 A | 82% → 100% | 59d → none |
| 59 | จัดทำเอกสาร Business process risk management |  | 2025-06-06 A | 75% → 100% | 0d → none |
| 60 | ส่งมอบเอกสาร Business process risk management และเอกสารที่เกี่ยวข้อง (Milestone #5) | 2025-06-09 A | 2025-06-09 A | 0% → 100% | 0d → none |
| 83 | จัดทำรายละเอียดการออกแบบระบบ (Design Specification) |  | 2025-06-04 A | 50% → 100% | 33d → none |
| 84 | ประชุมกับ Key User เพื่อสรุปยืนยัน Design Specification | 2025-06-05 A | 2025-06-05 A | 0% → 100% | 33d → none |
| 85 | Key User ตรวจสอบยืนยัน Design Specification | 2025-06-06 A | 2025-06-06 A | 0% → 100% | 33d → none |
| 86 | อนุมัติและยืนยัน Design Specification (Milestone #6) | 2025-06-09 A | 2025-06-09 A | 0% → 100% | 33d → none |
| 87 | **Implementation & UT** | 2025-06-04 A |  | 0% → 14% | 0d → 32d |
| 88 | **พัฒนาแบบประเมินบน Microsoft Form** | 2025-06-10 A |  | 0% → 55% | 33d → 57d |
| 89 | **กลุ่มงาน IT** | 2025-06-10 A | 2025-06-10 A | 0% → 100% | 33d → none |
| 90 | พัฒนาแบบฟอร์มการประเมินคุณภาพการส่งมอบสินค้า/บริการ (For IT User) | 2025-06-10 A | 2025-06-10 A | 0% → 100% | 33d → none |
| 91 | ทดสอบแบบฟอร์มการประเมินคุณภาพการส่งมอบสินค้า/บริการ (For IT User) | 2025-06-10 A | 2025-06-10 A | 0% → 100% | 57d → none |
| 92 | **กลุ่มงาน WASTE** | 2025-06-10 A | 2025-06-10 A | 0% → 100% | 58d → none |
| 93 | พัฒนาแบบฟอร์มการประเมินคุณภาพการส่งมอบสินค้า/บริการ WASTE | 2025-06-10 A | 2025-06-10 A | 0% → 100% | 58d → none |
| 94 | ทดสอบแบบฟอร์มการประเมินคุณภาพการส่งมอบสินค้า/บริการ (For IT User) | 2025-06-10 A | 2025-06-10 A | 0% → 100% | 58d → none |
| 95 | **กลุ่มงาน Logistic** | 2025-06-10 A | 2025-06-10 A | 0% → 100% | 58d → none |
| 96 | พัฒนาแบบฟอร์มการประเมินคุณภาพการส่งมอบสินค้า/บริการ Vendor-N (G.Logistics) | 2025-06-10 A | 2025-06-10 A | 0% → 100% | 58d → none |
| 97 | ทดสอบแบบฟอร์มการประเมินคุณภาพการส่งมอบสินค้า/บริการ Vendor-N (G.Logistics) | 2025-06-10 A | 2025-06-10 A | 0% → 100% | 58d → none |
| 98 | **กลุ่มงาน Manufacturing** | 2025-06-10 A | 2025-06-10 A | 0% → 100% | 58d → none |
| 99 | พัฒนาแบบฟอร์มการประเมินคุณภาพการส่งมอบสินค้า/บริการ Manufacturing_N | 2025-06-10 A | 2025-06-10 A | 0% → 100% | 58d → none |
| 100 | ทดสอบแบบฟอร์มการประเมินคุณภาพการส่งมอบสินค้า/บริการ Manufacturing_N | 2025-06-10 A | 2025-06-10 A | 0% → 100% | 58d → none |
| 101 | **กลุ่มงาน Commercial** | 2025-06-10 A | 2025-06-10 A | 0% → 100% | 58d → none |
| 102 | พัฒนาแบบฟอร์มการประเมินคุณภาพการส่งมอบสินค้า/บริการ Commercial | 2025-06-10 A | 2025-06-10 A | 0% → 100% | 58d → none |
| 103 | ทดสอบแบบฟอร์มการประเมินคุณภาพการส่งมอบสินค้า/บริการ Commercial | 2025-06-10 A | 2025-06-10 A | 0% → 100% | 58d → none |
| 104 | **กลุ่มงาน Outsource** | 2025-06-10 A | 2025-06-10 A | 0% → 100% | 33d → none |
| 105 | พัฒนาแบบฟอร์มการประเมินคุณภาพการส่งมอบสินค้า/บริการ (Outsource) | 2025-06-10 A | 2025-06-10 A | 0% → 100% | 58d → none |
| 106 | ทดสอบแบบฟอร์มการประเมินคุณภาพการส่งมอบสินค้า/บริการ (Outsource) | 2025-06-10 A | 2025-06-10 A | 0% → 100% | 33d → none |
| 181 | **จัดทำ Draft Process flow และเอกสารที่เกี่ยวข้อง รองรับกระบวนการใหม่** | 2025-06-04 A |  | 0% → 17% |  |
| 182 | จัดทำเอกสาร Business Process Flow | 2025-06-04 A |  | 0% → 21% |  |

## Version 5 (data date 2025-07-01, saved 2025-06-30, file Vendor Evaluation Dashboard V2_Plan_20250701.mpp)

Last finish stays 2025-09-03. Complete tasks 61 → 121.

Changed:

| ID | Task | Start | Finish | Complete | Total float |
| --- | --- | --- | --- | --- | --- |
| 17 | **ประชุมติดตามความคืบหน้าของโครงการ (Weekly)** |  |  | 40% → 55% |  |
| 26 | ประชุมติดตามความคืบหน้าของโครงการ (Weekly) 9 | 2025-06-11 A | 2025-06-11 A | 0% → 100% | 57d → none |
| 27 | ประชุมติดตามความคืบหน้าของโครงการ (Weekly) 10 | 2025-06-18 A | 2025-06-18 A | 0% → 100% | 52d → none |
| 28 | ประชุมติดตามความคืบหน้าของโครงการ (Weekly) 11 | 2025-06-25 A | 2025-06-25 A | 0% → 100% | 47d → none |
| 38 | **รายงานความคืบหน้าของโครงการใน Tech.PMO (Monthly)** |  |  | 40% → 60% |  |
| 41 | รายงานความคืบหน้าของโครงการใน Tech.PMO (Monthly) 3 | 2025-06-27 A | 2025-06-27 A | 0% → 100% | 45d → none |
| 87 | **Implementation & UT** |  |  | 14% → 83% |  |
| 88 | **พัฒนาแบบประเมินบน Microsoft Form** |  | 2025-06-11 A | 55% → 100% | 57d → none |
| 107 | **กลุ่มงาน Raw material** | 2025-06-11 A | 2025-06-11 A | 0% → 100% | 33d → none |
| 108 | พัฒนาแบบฟอร์มการประเมินคุณภาพการส่งมอบสินค้า/บริการ RAW MATERIAL | 2025-06-11 A | 2025-06-11 A | 0% → 100% | 33d → none |
| 109 | ทดสอบแบบฟอร์มการประเมินคุณภาพการส่งมอบสินค้า/บริการ RAW MATERIAL | 2025-06-11 A | 2025-06-11 A | 0% → 100% | 33d → none |
| 110 | **กลุ่มงาน Packaging** | 2025-06-11 A | 2025-06-11 A | 0% → 100% | 57d → none |
| 111 | พัฒนาแบบฟอร์มการประเมินคุณภาพการส่งมอบสินค้า/บริการ PKG | 2025-06-11 A | 2025-06-11 A | 0% → 100% | 57d → none |
| 112 | ทดสอบแบบฟอร์มการประเมินคุณภาพการส่งมอบสินค้า/บริการ PKG | 2025-06-11 A | 2025-06-11 A | 0% → 100% | 57d → none |
| 113 | **กลุ่มงาน Agile** | 2025-06-11 A | 2025-06-11 A | 0% → 100% | 57d → none |
| 114 | พัฒนาแบบฟอร์มการประเมินคุณภาพการส่งมอบสินค้า/บริการ AGILE | 2025-06-11 A | 2025-06-11 A | 0% → 100% | 57d → none |
| 115 | ทดสอบแบบฟอร์มการประเมินคุณภาพการส่งมอบสินค้า/บริการ AGILE | 2025-06-11 A | 2025-06-11 A | 0% → 100% | 57d → none |
| 116 | **กลุ่มงาน Property** | 2025-06-11 A | 2025-06-11 A | 0% → 100% | 57d → none |
| 117 | พัฒนาแบบฟอร์มการประเมินคุณภาพการส่งมอบสินค้า/บริการ PROPERTY | 2025-06-11 A | 2025-06-11 A | 0% → 100% | 57d → none |
| 118 | ทดสอบแบบฟอร์มการประเมินคุณภาพการส่งมอบสินค้า/บริการ PROPERTY | 2025-06-11 A | 2025-06-11 A | 0% → 100% | 57d → none |
| 119 | **กลุ่มงาน Energy and Chemical** | 2025-06-11 A | 2025-06-11 A | 0% → 100% | 57d → none |
| 120 | พัฒนาแบบฟอร์มการประเมินคุณภาพการส่งมอบสินค้า/บริการ ENERGY_CHEMICAL | 2025-06-11 A | 2025-06-11 A | 0% → 100% | 57d → none |
| 121 | ทดสอบแบบฟอร์มการประเมินคุณภาพการส่งมอบสินค้า/บริการ ENERGY_CHEMICAL | 2025-06-11 A | 2025-06-11 A | 0% → 100% | 57d → none |
| 122 | **พัฒนาแบบประเมินของกลุ่มงาน IT** | 2025-06-11 A | 2025-06-11 A | 0% → 100% | 57d → none |
| 123 | พัฒนา Flow แบบประเมินคุณภาพการส่งมอบสินค้า/บริการ (For IT User) บน Power Automate | 2025-06-11 A | 2025-06-11 A | 0% → 100% | 57d → none |
| 124 | ทดสอบการเชื่อมต่อระหว่าง Microsoft Form และ Power Automate | 2025-06-11 A | 2025-06-11 A | 0% → 100% | 57d → none |
| 125 | พัฒนา List สำหรับจัดเก็บข้อมูลแบบประเมินคุณภาพการส่งมอบสินค้า/บริการ (For IT User) บน Sharepoint | 2025-06-11 A | 2025-06-11 A | 0% → 100% | 57d → none |
| 126 | ทดสอบการเชื่อมต่อระหว่าง Microsoft Form ,Power Automate และ Sharepoint List | 2025-06-11 A | 2025-06-11 A | 0% → 100% | 57d → none |
| 127 | **พัฒนาแบบประเมินของกลุ่มงาน WASTE** | 2025-06-11 A | 2025-06-11 A | 0% → 100% | 57d → none |
| 128 | พัฒนา Flow แบบประเมินคุณภาพการส่งมอบสินค้า/บริการ WASTE บน Power Automate | 2025-06-11 A | 2025-06-11 A | 0% → 100% | 57d → none |
| 129 | ทดสอบการเชื่อมต่อระหว่าง Microsoft Form และ Power Automate | 2025-06-11 A | 2025-06-11 A | 0% → 100% | 57d → none |
| 130 | พัฒนา List สำหรับจัดเก็บข้อมูลแบบประเมินคุณภาพการส่งมอบสินค้า/บริการ WASTE บน Sharepoint | 2025-06-11 A | 2025-06-11 A | 0% → 100% | 57d → none |
| 131 | ทดสอบการเชื่อมต่อระหว่าง Microsoft Form ,Power Automate และ Sharepoint List | 2025-06-11 A | 2025-06-11 A | 0% → 100% | 57d → none |
| 132 | **พัฒนาแบบประเมินของกลุ่มงาน Logistic** | 2025-06-11 A | 2025-06-11 A | 0% → 100% | 57d → none |
| 133 | พัฒนา Flow แบบประเมินคุณภาพการส่งมอบสินค้า/บริการ Vendor-N (G.Logistics) บน Power Automate | 2025-06-11 A | 2025-06-11 A | 0% → 100% | 57d → none |
| 134 | ทดสอบการเชื่อมต่อระหว่าง Microsoft Form และ Power Automate | 2025-06-11 A | 2025-06-11 A | 0% → 100% | 57d → none |
| 135 | พัฒนา List สำหรับจัดเก็บข้อมูลแบบประเมินคุณภาพการส่งมอบสินค้า/บริการ Vendor-N (G.Logistics) บน Sharepoint | 2025-06-11 A | 2025-06-11 A | 0% → 100% | 57d → none |
| 136 | ทดสอบการเชื่อมต่อระหว่าง Microsoft Form ,Power Automate และ Sharepoint List | 2025-06-11 A | 2025-06-11 A | 0% → 100% | 57d → none |
| 137 | **พัฒนาแบบประเมินของกลุ่มงาน Manufaturing** | 2025-06-11 A | 2025-06-11 A | 0% → 100% | 57d → none |
| 138 | พัฒนา Flow แบบประเมินคุณภาพการส่งมอบสินค้า/บริการ Manufacturing_N บน Power Automate | 2025-06-11 A | 2025-06-11 A | 0% → 100% | 57d → none |
| 139 | ทดสอบการเชื่อมต่อระหว่าง Microsoft Form และ Power Automate | 2025-06-11 A | 2025-06-11 A | 0% → 100% | 57d → none |
| 140 | พัฒนา List สำหรับจัดเก็บข้อมูลแบบประเมินคุณภาพการส่งมอบสินค้า/บริการ Manufacturing_N บน Sharepoint | 2025-06-11 A | 2025-06-11 A | 0% → 100% | 57d → none |
| 141 | ทดสอบการเชื่อมต่อระหว่าง Microsoft Form ,Power Automate และ Sharepoint List | 2025-06-11 A | 2025-06-11 A | 0% → 100% | 57d → none |
| 142 | **พัฒนาแบบประเมินของกลุ่มงาน Commercial** | 2025-06-11 A | 2025-06-11 A | 0% → 100% | 57d → none |
| 143 | พัฒนา Flow แบบประเมินคุณภาพการส่งมอบสินค้า/บริการ Commercial บน Power Automate | 2025-06-11 A | 2025-06-11 A | 0% → 100% | 57d → none |
| 144 | ทดสอบการเชื่อมต่อระหว่าง Microsoft Form และ Power Automate | 2025-06-11 A | 2025-06-11 A | 0% → 100% | 57d → none |
| 145 | พัฒนา List สำหรับจัดเก็บข้อมูลแบบประเมินคุณภาพการส่งมอบสินค้า/บริการ Commercial บน Sharepoint | 2025-06-11 A | 2025-06-11 A | 0% → 100% | 57d → none |
| 146 | ทดสอบการเชื่อมต่อระหว่าง Microsoft Form ,Power Automate และ Sharepoint List | 2025-06-11 A | 2025-06-11 A | 0% → 100% | 57d → none |
| 147 | **พัฒนาแบบประเมินของกลุ่มงาน Outsource** | 2025-06-11 A | 2025-06-11 A | 0% → 100% | 57d → none |
| 148 | พัฒนา Flow แบบประเมินคุณภาพการส่งมอบสินค้า/บริการ (Outsource) บน Power Automate | 2025-06-11 A | 2025-06-11 A | 0% → 100% | 57d → none |
| 149 | ทดสอบการเชื่อมต่อระหว่าง Microsoft Form และ Power Automate | 2025-06-11 A | 2025-06-11 A | 0% → 100% | 57d → none |
| 150 | พัฒนา List สำหรับจัดเก็บข้อมูลแบบประเมินคุณภาพการส่งมอบสินค้า/บริการ (Outsource) บน Sharepoint | 2025-06-11 A | 2025-06-11 A | 0% → 100% | 57d → none |
| 151 | ทดสอบการเชื่อมต่อระหว่าง Microsoft Form ,Power Automate และ Sharepoint List | 2025-06-11 A | 2025-06-11 A | 0% → 100% | 57d → none |
| 152 | **พัฒนาแบบประเมินของกลุ่มงาน Raw material** | 2025-06-12 A | 2025-06-12 A | 0% → 100% | 33d → none |
| 153 | พัฒนา Flow แบบประเมินคุณภาพการส่งมอบสินค้า/บริการ RAW MATERIAL บน Power Automate | 2025-06-12 A | 2025-06-12 A | 0% → 100% | 33d → none |
| 154 | ทดสอบการเชื่อมต่อระหว่าง Microsoft Form และ Power Automate | 2025-06-12 A | 2025-06-12 A | 0% → 100% | 56d → none |
| 155 | พัฒนา List สำหรับจัดเก็บข้อมูลแบบประเมินคุณภาพการส่งมอบสินค้า/บริการ RAW MATERIAL บน Sharepoint | 2025-06-12 A | 2025-06-12 A | 0% → 100% | 56d → none |
| 156 | ทดสอบการเชื่อมต่อระหว่าง Microsoft Form ,Power Automate และ Sharepoint List | 2025-06-12 A | 2025-06-12 A | 0% → 100% | 56d → none |
| 157 | **พัฒนาแบบประเมินของกลุ่มงาน Packaging** | 2025-06-12 A | 2025-06-12 A | 0% → 100% | 56d → none |
| 158 | พัฒนา Flow แบบประเมินคุณภาพการส่งมอบสินค้า/บริการ PKG บน Power Automate | 2025-06-12 A | 2025-06-12 A | 0% → 100% | 56d → none |
| 159 | ทดสอบการเชื่อมต่อระหว่าง Microsoft Form และ Power Automate | 2025-06-12 A | 2025-06-12 A | 0% → 100% | 56d → none |
| 160 | พัฒนา List สำหรับจัดเก็บข้อมูลแบบประเมินคุณภาพการส่งมอบสินค้า/บริการ PKG บน Sharepoint | 2025-06-12 A | 2025-06-12 A | 0% → 100% | 56d → none |
| 161 | ทดสอบการเชื่อมต่อระหว่าง Microsoft Form ,Power Automate และ Sharepoint List | 2025-06-12 A | 2025-06-12 A | 0% → 100% | 56d → none |
| 162 | **พัฒนาแบบประเมินของกลุ่มงาน Agile** | 2025-06-12 A | 2025-06-12 A | 0% → 100% | 56d → none |
| 163 | พัฒนา Flow แบบประเมินคุณภาพการส่งมอบสินค้า/บริการ AGILE บน Power Automate | 2025-06-12 A | 2025-06-12 A | 0% → 100% | 56d → none |
| 164 | ทดสอบการเชื่อมต่อระหว่าง Microsoft Form และ Power Automate | 2025-06-12 A | 2025-06-12 A | 0% → 100% | 56d → none |
| 165 | พัฒนา List สำหรับจัดเก็บข้อมูลแบบประเมินคุณภาพการส่งมอบสินค้า/บริการ AGILE บน Sharepoint | 2025-06-12 A | 2025-06-12 A | 0% → 100% | 56d → none |
| 166 | ทดสอบการเชื่อมต่อระหว่าง Microsoft Form ,Power Automate และ Sharepoint List | 2025-06-12 A | 2025-06-12 A | 0% → 100% | 56d → none |
| 167 | **พัฒนาแบบประเมินของกลุ่มงาน Property** | 2025-06-12 A | 2025-06-12 A | 0% → 100% | 56d → none |
| 168 | พัฒนา Flow แบบประเมินคุณภาพการส่งมอบสินค้า/บริการ PROPERTY บน Power Automate | 2025-06-12 A | 2025-06-12 A | 0% → 100% | 56d → none |

| ID | Task | Start | Finish | Complete | Total float |
| --- | --- | --- | --- | --- | --- |
| 169 | ทดสอบการเชื่อมต่อระหว่าง Microsoft Form และ Power Automate | 2025-06-12 A | 2025-06-12 A | 0% → 100% | 56d → none |
| 170 | พัฒนา List สำหรับจัดเก็บข้อมูลแบบประเมินคุณภาพการส่งมอบสินค้า/บริการ PROPERTY บน Sharepoint | 2025-06-12 A | 2025-06-12 A | 0% → 100% | 56d → none |
| 171 | ทดสอบการเชื่อมต่อระหว่าง Microsoft Form ,Power Automate และ Sharepoint List | 2025-06-12 A | 2025-06-12 A | 0% → 100% | 56d → none |
| 172 | **พัฒนาแบบประเมินของกลุ่มงาน Energy and Chemical** | 2025-06-12 A | 2025-06-12 A | 0% → 100% | 33d → none |
| 173 | พัฒนา Flow แบบประเมินคุณภาพการส่งมอบสินค้า/บริการ ENERGY_CHEMICAL บน Power Automate | 2025-06-12 A | 2025-06-12 A | 0% → 100% | 56d → none |
| 174 | ทดสอบการเชื่อมต่อระหว่าง Microsoft Form และ Power Automate | 2025-06-12 A | 2025-06-12 A | 0% → 100% | 56d → none |
| 175 | พัฒนา List สำหรับจัดเก็บข้อมูลแบบประเมินคุณภาพการส่งมอบสินค้า/บริการ ENERGY_CHEMICAL บน Sharepoint | 2025-06-12 A | 2025-06-12 A | 0% → 100% | 56d → none |
| 176 | ทดสอบการเชื่อมต่อระหว่าง Microsoft Form ,Power Automate และ Sharepoint List | 2025-06-12 A | 2025-06-12 A | 0% → 100% | 33d → none |
| 177 | พัฒนาโปรแกรมสำหรับดึงข้อมูลจาก Sharepoint List เก็บลง Database | 2025-06-13 A | 2025-06-16 A | 0% → 100% | 33d → none |
| 178 | ทดสอบการเชื่อมต่อโปรแกรมระหว่าง Sharepoint List และ Database | 2025-06-17 A | 2025-06-18 A | 0% → 100% | 33d → none |
| 179 | พัฒนา Model ใช้สำหรับนำไปแสดงผลรายงาน | 2025-06-19 A |  | 0% → 64% |  |
| 181 | **จัดทำ Draft Process flow และเอกสารที่เกี่ยวข้อง รองรับกระบวนการใหม่** |  |  | 17% → 67% |  |
| 182 | จัดทำเอกสาร Business Process Flow |  |  | 21% → 83% |  |

## Version 6 (data date 2025-07-08, saved 2025-07-07, file Vendor Evaluation Dashboard V2_Plan_20250708.mpp)

Last finish stays 2025-09-03. Complete tasks 121 → 124.

Changed:

| ID | Task | Start | Finish | Complete | Total float |
| --- | --- | --- | --- | --- | --- |
| 17 | **ประชุมติดตามความคืบหน้าของโครงการ (Weekly)** |  |  | 55% → 60% |  |
| 29 | ประชุมติดตามความคืบหน้าของโครงการ (Weekly) 12 | 2025-07-02 A | 2025-07-02 A | 0% → 100% | 42d → none |
| 87 | **Implementation & UT** |  |  | 83% → 91% |  |
| 179 | พัฒนา Model ใช้สำหรับนำไปแสดงผลรายงาน |  | 2025-07-08 A | 64% → 100% | 33d → none |
| 181 | **จัดทำ Draft Process flow และเอกสารที่เกี่ยวข้อง รองรับกระบวนการใหม่** |  |  | 67% → 83% |  |
| 182 | จัดทำเอกสาร Business Process Flow |  | 2025-07-07 A | 83% → 100% | 0d → none |
| 183 | ส่งมอบ UPM Sign-off และ Draf of ARIS Flow ให้กับหน่วยงาน BPM | 2025-07-08 A |  | 0% → 33% |  |

## Version 7 (data date 2025-07-22, saved 2025-07-21, file Vendor Evaluation Dashboard V2_Plan_20250722.mpp)

Last finish stays 2025-09-03. Complete tasks 124 → 135.

Changed:

| ID | Task | Start | Finish | Complete | Total float |
| --- | --- | --- | --- | --- | --- |
| 8 | ส่งมอบBPM Sign-off Draft Process Flow และเอกสารที่เกี่ยวข้อง (Milestone #7) | 2025-07-16 A | 2025-07-16 A | 0% → 100% | 33d → none |
| 9 | ส่งมอบระบบงานที่พัฒนาเรียบร้อยแล้ว (Milestone #8) | 2025-07-17 A | 2025-07-17 A | 0% → 100% | 32d → none |
| 17 | **ประชุมติดตามความคืบหน้าของโครงการ (Weekly)** |  |  | 60% → 70% |  |
| 30 | ประชุมติดตามความคืบหน้าของโครงการ (Weekly) 13 | 2025-07-09 A | 2025-07-09 A | 0% → 100% | 37d → none |
| 31 | ประชุมติดตามความคืบหน้าของโครงการ (Weekly) 14 | 2025-07-16 A | 2025-07-16 A | 0% → 100% | 33d → none |
| 87 | **Implementation & UT** |  | 2025-07-17 A | 91% → 100% | 32d → none |
| 180 | พัฒนา Dashboard | 2025-07-09 A | 2025-07-16 A | 0% → 100% | 33d → none |
| 181 | **จัดทำ Draft Process flow และเอกสารที่เกี่ยวข้อง รองรับกระบวนการใหม่** |  | 2025-07-16 A | 83% → 100% | 0d → none |
| 183 | ส่งมอบ UPM Sign-off และ Draf of ARIS Flow ให้กับหน่วยงาน BPM |  | 2025-07-11 A | 33% → 100% | 0d → none |
| 184 | จัดเก็บเอกสารเข้าระบบ ISO และส่งมอบเอกสารให้หน่วยงาน BPM | 2025-07-14 A | 2025-07-15 A | 0% → 100% | 0d → none |
| 185 | ส่งมอบBPM Sign-off Draft Process Flow และเอกสารที่เกี่ยวข้อง (Milestone #7) | 2025-07-16 A | 2025-07-16 A | 0% → 100% | 0d → none |
| 186 | ส่งมอบระบบงานที่พัฒนาเรียบร้อยแล้ว (Milestone #8) | 2025-07-17 A | 2025-07-17 A | 0% → 100% | 0d → none |
| 187 | **Test And Trainning Key User** | 2025-07-18 A |  | 0% → 30% |  |
| 188 | จัดเตรียม Environment Test | 2025-07-18 A | 2025-07-18 A | 0% → 100% | 0d → none |
| 189 | จัดทำเอกสารการฝึกอบรมสำหรับ Key User (Trainng Document) | 2025-07-21 A | 2025-07-21 A | 0% → 100% | 0d → none |
| 190 | ดำเนินการทดสอบ UAT และ Training | 2025-07-22 A |  | 0% → 20% |  |

## Version 8 (data date 2025-07-29, saved 2025-07-28, file Vendor Evaluation Dashboard V2_Plan_20250729.mpp)

Last finish stays 2025-09-03. Complete tasks 135 → 138.

Changed:

| ID | Task | Start | Finish | Complete | Total float |
| --- | --- | --- | --- | --- | --- |
| 17 | **ประชุมติดตามความคืบหน้าของโครงการ (Weekly)** |  |  | 70% → 75% |  |
| 32 | ประชุมติดตามความคืบหน้าของโครงการ (Weekly) 15 | 2025-07-23 A | 2025-07-23 A | 0% → 100% | 28d → none |
| 38 | **รายงานความคืบหน้าของโครงการใน Tech.PMO (Monthly)** |  |  | 60% → 80% |  |
| 42 | รายงานความคืบหน้าของโครงการใน Tech.PMO (Monthly) 4 | 2025-07-25 A | 2025-07-25 A | 0% → 100% | 26d → none |
| 187 | **Test And Trainning Key User** |  |  | 30% → 70% |  |
| 190 | ดำเนินการทดสอบ UAT และ Training |  | 2025-07-29 A | 20% → 100% | 0d → none |

## Version 9 (data date 2025-08-19, saved 2025-08-18, file Vendor Evaluation Dashboard V2_Plan_20250819.mpp)

Last finish stays 2025-09-03. Complete tasks 138 → 148.

Changed:

| ID | Task | Start | Finish | Complete | Total float |
| --- | --- | --- | --- | --- | --- |
| 10 | UAT Sign-off (Milestone #9) | 2025-08-01 A | 2025-08-01 A | 0% → 100% | 22d → none |
| 11 | ดำเนินการ Go-Live(Milestone #10) | 2025-08-06 A | 2025-08-06 A | 0% → 100% | 19d → none |
| 17 | **ประชุมติดตามความคืบหน้าของโครงการ (Weekly)** |  |  | 75% → 90% |  |
| 33 | ประชุมติดตามความคืบหน้าของโครงการ (Weekly) 16 | 2025-07-30 A | 2025-07-30 A | 0% → 100% | 24d → none |
| 34 | ประชุมติดตามความคืบหน้าของโครงการ (Weekly) 17 | 2025-08-06 A | 2025-08-06 A | 0% → 100% | 19d → none |
| 35 | ประชุมติดตามความคืบหน้าของโครงการ (Weekly) 18 | 2025-08-13 A | 2025-08-13 A | 0% → 100% | 15d → none |
| 187 | **Test And Trainning Key User** |  | 2025-08-01 A | 70% → 100% | 0d → none |
| 191 | แก้ไข Defect จาก UAT | 2025-07-30 A | 2025-07-31 A | 0% → 100% | 0d → none |
| 192 | UAT Sign-off (Milestone #9) | 2025-08-01 A | 2025-08-01 A | 0% → 100% | 0d → none |
| 193 | **Deploy** | 2025-08-04 A | 2025-08-06 A | 0% → 100% | 0d → none |
| 194 | จัดทำแผน Go-Live Plan | 2025-08-04 A | 2025-08-04 A | 0% → 100% | 0d → none |
| 195 | ตรวจสอบความพร้อมในการ Go-Live (Go/No-Go Checklist) | 2025-08-05 A | 2025-08-05 A | 0% → 100% | 0d → none |
| 196 | ดำเนินการ Go-Live(Milestone #10) | 2025-08-06 A | 2025-08-06 A | 0% → 100% | 0d → none |
| 197 | **Stabilization** | 2025-08-07 A |  | 0% → 55% | 0d → 4d |
| 198 | สนับสนุนการใช้งาน หลัง Go-Live (หลังจบโครงการ 1 Month) | 2025-08-07 A |  | 0% → 53% | 0d → 4d |
| 199 | เก็บ Issues Log บน ระบบจริงที่ใช้งาน และแก้ไข | 2025-08-07 A |  | 0% → 57% |  |

## Version 10 (data date 2025-09-02, saved 2025-09-01, file Vendor Evaluation Dashboard V2_Plan_20250902.mpp)

Last finish stays 2025-09-03. Complete tasks 148 → 157.

Changed:

| ID | Task | Start | Finish | Complete | Total float |
| --- | --- | --- | --- | --- | --- |
| 17 | **ประชุมติดตามความคืบหน้าของโครงการ (Weekly)** |  | 2025-08-27 A | 90% → 100% | 5d → none |
| 36 | ประชุมติดตามความคืบหน้าของโครงการ (Weekly) 19 | 2025-08-20 A | 2025-08-20 A | 0% → 100% | 10d → none |
| 37 | ประชุมติดตามความคืบหน้าของโครงการ (Weekly) 20 | 2025-08-27 A | 2025-08-27 A | 0% → 100% | 5d → none |
| 38 | **รายงานความคืบหน้าของโครงการใน Tech.PMO (Monthly)** |  | 2025-08-29 A | 80% → 100% | 3d → none |
| 43 | รายงานความคืบหน้าของโครงการใน Tech.PMO (Monthly) 5 | 2025-08-29 A | 2025-08-29 A | 0% → 100% | 3d → none |
| 197 | **Stabilization** |  | 2025-08-28 A | 55% → 100% | 4d → none |
| 198 | สนับสนุนการใช้งาน หลัง Go-Live (หลังจบโครงการ 1 Month) |  | 2025-08-28 A | 53% → 100% | 4d → none |
| 199 | เก็บ Issues Log บน ระบบจริงที่ใช้งาน และแก้ไข |  | 2025-08-27 A | 57% → 100% | 0d → none |
| 200 | **Project Closure** | 2025-08-28 A |  | 0% → 80% |  |
| 201 | จัดทำ Lesson Learned โครงการ | 2025-08-28 A | 2025-08-28 A | 0% → 100% | 0d → none |
| 202 | ส่งมอบโครงการ สู่งานประจำ (Handover) | 2025-08-29 A | 2025-08-29 A | 0% → 100% | 0d → none |
| 203 | จัดเก็บเอกสาร Project Files ทั้งหมด | 2025-09-01 A | 2025-09-01 A | 0% → 100% | 0d → none |
| 204 | กำหนดระยะเวลาในการวัด Outcome ของโครงการ (Project KPI) | 2025-09-02 A | 2025-09-02 A | 0% → 100% | 0d → none |
