# Vendor Evaluation

How a schedule from MS Project changed from version to version. A marks actual dates.

## Version 1 (data date 2025-04-15, saved 2025-05-02, file WBS -  Vendor Evaluation_v3.mpp)

| ID | WBS | Task | Duration | Start | Finish | Predecessors | Total float | Constraint |
| --- | --- | --- | --- | --- | --- | --- | --- | --- |
| 1 | 1 | **Milestones** | 90d | 2025-04-30 | 2025-09-03 |  | 0d |  |
| 2 |  | เสนอ Project Charter ให้ผู้บริหารอนุมัติ (Milestone #1) | 0d | 2025-04-30 | 2025-04-30 | 15 | 90d |  |
| 3 |  | ประชุม Kick off โครงการ เพื่อสื่อสารแผนงานโครงการ (Milestone #2) | 0d | 2025-05-02 | 2025-05-02 | 16 | 88d |  |
| 4 |  | อนุมัติและยืนยัน Requirement Specification (Milestone #3) | 0d | 2025-05-14 | 2025-05-14 | 51 | 80d |  |
| 5 |  | อนุมัติและยืนยัน Data Retention Sign-Off Form (Milestone #4) | 0d | 2025-05-15 | 2025-05-15 | 53 | 79d |  |
| 6 |  | ส่งมอบเอกสาร Business process risk management และเอกสารที่เกี่ยวข้อง (Milestone #5) | 0d | 2025-05-27 | 2025-05-27 | 60 | 71d |  |
| 7 |  | อนุมัติและยืนยัน Design Specification (Milestone #6) | 0d | 2025-06-09 | 2025-06-09 | 86 | 62d |  |
| 8 |  | ส่งมอบBPM Sign-off Draft Process Flow และเอกสารที่เกี่ยวข้อง (Milestone #7) | 0d | 2025-07-16 | 2025-07-16 | 185 | 35d |  |
| 9 |  | ส่งมอบระบบงานที่พัฒนาเรียบร้อยแล้ว (Milestone #8) | 0d | 2025-07-17 | 2025-07-17 | 186 | 34d |  |
| 10 |  | UAT Sign-off (Milestone #9) | 0d | 2025-08-01 | 2025-08-01 | 192 | 23d |  |
| 11 |  | ดำเนินการ Go-Live(Milestone #10) | 0d | 2025-08-06 | 2025-08-06 | 196 | 20d |  |
| 12 |  | ดำเนินการปิดโครงการ (Milestone #11) | 0d | 2025-09-03 | 2025-09-03 | 205 | 0d |  |
| 13 | 2 | **Project Preparation** | 14d | 2025-04-15 | 2025-05-02 |  | 0d |  |
| 14 |  | จัดทำ Project Charter | 11d | 2025-04-15 | 2025-04-29 |  | 0d |  |
| 15 |  | เสนอ Project Charter ให้ผู้บริหารอนุมัติ (Milestone #1) | 1d | 2025-04-30 | 2025-04-30 | 14 | 0d |  |
| 16 |  | ประชุม Kick off โครงการ เพื่อสื่อสารแผนงานโครงการ (Milestone #2) | 1d | 2025-05-02 | 2025-05-02 | 15FS+1d | 0d |  |
| 17 | 3 | **ประชุมติดตามความคืบหน้าของโครงการ (Weekly)** | 96d | 2025-04-16 | 2025-08-27 |  | 5d |  |
| 18 |  | ประชุมติดตามความคืบหน้าของโครงการ (Weekly) 1 | 1d | 2025-04-16 | 2025-04-16 |  | 100d | start no earlier than 2025-04-16 |
| 19 |  | ประชุมติดตามความคืบหน้าของโครงการ (Weekly) 2 | 1d | 2025-04-23 | 2025-04-23 |  | 95d | start no earlier than 2025-04-23 |
| 20 |  | ประชุมติดตามความคืบหน้าของโครงการ (Weekly) 3 | 1d | 2025-04-30 | 2025-04-30 |  | 90d | start no earlier than 2025-04-30 |
| 21 |  | ประชุมติดตามความคืบหน้าของโครงการ (Weekly) 4 | 1d | 2025-05-07 | 2025-05-07 |  | 85d | start no earlier than 2025-05-07 |
| 22 |  | ประชุมติดตามความคืบหน้าของโครงการ (Weekly) 5 | 1d | 2025-05-14 | 2025-05-14 |  | 80d | start no earlier than 2025-05-14 |
| 23 |  | ประชุมติดตามความคืบหน้าของโครงการ (Weekly) 6 | 1d | 2025-05-21 | 2025-05-21 |  | 75d | start no earlier than 2025-05-21 |
| 24 |  | ประชุมติดตามความคืบหน้าของโครงการ (Weekly) 7 | 1d | 2025-05-28 | 2025-05-28 |  | 70d | start no earlier than 2025-05-28 |
| 25 |  | ประชุมติดตามความคืบหน้าของโครงการ (Weekly) 8 | 1d | 2025-06-04 | 2025-06-04 |  | 65d | start no earlier than 2025-06-04 |
| 26 |  | ประชุมติดตามความคืบหน้าของโครงการ (Weekly) 9 | 1d | 2025-06-11 | 2025-06-11 |  | 60d | start no earlier than 2025-06-11 |
| 27 |  | ประชุมติดตามความคืบหน้าของโครงการ (Weekly) 10 | 1d | 2025-06-18 | 2025-06-18 |  | 55d | start no earlier than 2025-06-18 |
| 28 |  | ประชุมติดตามความคืบหน้าของโครงการ (Weekly) 11 | 1d | 2025-06-25 | 2025-06-25 |  | 50d | start no earlier than 2025-06-25 |
| 29 |  | ประชุมติดตามความคืบหน้าของโครงการ (Weekly) 12 | 1d | 2025-07-02 | 2025-07-02 |  | 45d | start no earlier than 2025-07-02 |
| 30 |  | ประชุมติดตามความคืบหน้าของโครงการ (Weekly) 13 | 1d | 2025-07-09 | 2025-07-09 |  | 40d | start no earlier than 2025-07-09 |
| 31 |  | ประชุมติดตามความคืบหน้าของโครงการ (Weekly) 14 | 1d | 2025-07-16 | 2025-07-16 |  | 35d | start no earlier than 2025-07-16 |
| 32 |  | ประชุมติดตามความคืบหน้าของโครงการ (Weekly) 15 | 1d | 2025-07-23 | 2025-07-23 |  | 30d | start no earlier than 2025-07-23 |
| 33 |  | ประชุมติดตามความคืบหน้าของโครงการ (Weekly) 16 | 1d | 2025-07-30 | 2025-07-30 |  | 25d | start no earlier than 2025-07-30 |
| 34 |  | ประชุมติดตามความคืบหน้าของโครงการ (Weekly) 17 | 1d | 2025-08-06 | 2025-08-06 |  | 20d | start no earlier than 2025-08-06 |
| 35 |  | ประชุมติดตามความคืบหน้าของโครงการ (Weekly) 18 | 1d | 2025-08-13 | 2025-08-13 |  | 15d | start no earlier than 2025-08-13 |
| 36 |  | ประชุมติดตามความคืบหน้าของโครงการ (Weekly) 19 | 1d | 2025-08-20 | 2025-08-20 |  | 10d | start no earlier than 2025-08-20 |
| 37 |  | ประชุมติดตามความคืบหน้าของโครงการ (Weekly) 20 | 1d | 2025-08-27 | 2025-08-27 |  | 5d | start no earlier than 2025-08-27 |
| 38 | 4 | **รายงานความคืบหน้าของโครงการใน Tech.PMO (Monthly)** | 91d | 2025-04-25 | 2025-08-29 |  | 3d |  |
| 39 |  | รายงานความคืบหน้าของโครงการใน Tech.PMO (Monthly) 1 | 1d | 2025-04-25 | 2025-04-25 |  | 93d | start no earlier than 2025-04-25 |
| 40 |  | รายงานความคืบหน้าของโครงการใน Tech.PMO (Monthly) 2 | 1d | 2025-05-30 | 2025-05-30 |  | 68d | start no earlier than 2025-05-30 |
| 41 |  | รายงานความคืบหน้าของโครงการใน Tech.PMO (Monthly) 3 | 1d | 2025-06-27 | 2025-06-27 |  | 48d | start no earlier than 2025-06-27 |
| 42 |  | รายงานความคืบหน้าของโครงการใน Tech.PMO (Monthly) 4 | 1d | 2025-07-25 | 2025-07-25 |  | 28d | start no earlier than 2025-07-25 |
| 43 |  | รายงานความคืบหน้าของโครงการใน Tech.PMO (Monthly) 5 | 1d | 2025-08-29 | 2025-08-29 |  | 3d | start no earlier than 2025-08-29 |
| 44 | 5 | **Requirement Gathering** | 8d | 2025-05-06 | 2025-05-15 |  | 0d |  |
| 45 |  | ศึกษากระบวนการทำงานในปัจจุบัน (As Is) | 2d | 2025-05-06 | 2025-05-07 | 16FS+1d | 0d |  |
| 46 |  | ศึกษาปัญหาของการทำงานในปัจจุบัน | 2d | 2025-05-06 | 2025-05-07 | 45SS | 85d |  |
| 47 |  | จัดประชุมสัมภาษณ์ตัวแทนผู้ปฏิบัติงานเพื่อค้นหาความต้องการ (Interview Key Users) | 2d | 2025-05-06 | 2025-05-07 | 45SS | 0d |  |
| 48 |  | สรุปจัดทำรายละเอียดความต้องการ (Develop Requirement Specification) | 1d | 2025-05-08 | 2025-05-08 | 47 | 0d |  |
| 49 |  | ประชุมกับ User เพื่อสรุปยืนยัน Requirement | 1d | 2025-05-09 | 2025-05-09 | 48 | 0d |  |
| 50 |  | แก้ไขเอกสาร Requirement Specification #ครั้งที่ 1 | 1d | 2025-05-13 | 2025-05-13 | 49FS+1d | 0d |  |
| 51 |  | อนุมัติและยืนยัน Requirement Specification (Milestone #3) | 1d | 2025-05-14 | 2025-05-14 | 50 | 0d |  |
| 52 |  | กำหนดระยะเวลาการเก็บรักษาข้อมูล (Data Retention) | 1d | 2025-05-14 | 2025-05-14 | 51SS | 0d |  |
| 53 |  | อนุมัติและยืนยัน Data Retention Sign-Off Form (Milestone #4) | 1d | 2025-05-15 | 2025-05-15 | 52 | 0d |  |
| 54 | 6 | **Design** | 17d | 2025-05-16 | 2025-06-09 |  | 1d |  |
| 55 |  | ออกแบบสถาปัตยกรรมระบบ (Solution Architecture) | 4d | 2025-05-16 | 2025-05-21 | 53 | 68d |  |
| 56 |  | ออกแบบ Data Flow ของระบบงาน | 3d | 2025-05-22 | 2025-05-26 | 55 | 72d |  |
| 57 |  | ออกแบบโครงสร้างฐานข้อมูล (DB Structure and Schema) | 7d | 2025-05-22 | 2025-05-30 | 55 | 68d |  |
| 58 |  | Business process management and Business process risk management training for User | 1d | 2025-05-19 | 2025-05-19 | 53FS+1d | 0d |  |
| 59 |  | จัดทำเอกสาร Business process risk management | 5d | 2025-05-20 | 2025-05-26 | 58 | 0d |  |
| 60 |  | ส่งมอบเอกสาร Business process risk management และเอกสารที่เกี่ยวข้อง (Milestone #5) | 1d | 2025-05-27 | 2025-05-27 | 59 | 0d |  |
| 61 | 6.7 | **กลุ่มงาน IT** | 1d | 2025-05-28 | 2025-05-28 |  | 0d |  |
| 62 |  | ออกแบบแบบฟอร์มการประเมินคุณภาพการส่งมอบสินค้า/บริการ (For IT User) | 1d | 2025-05-28 | 2025-05-28 | 60 | 0d |  |
| 63 | 6.8 | **กลุ่มงาน WASTE** | 1d | 2025-05-28 | 2025-05-28 |  | 70d |  |
| 64 |  | ออกแบบแบบฟอร์มการประเมินคุณภาพการส่งมอบสินค้า/บริการ WASTE | 1d | 2025-05-28 | 2025-05-28 | 62SS | 70d |  |
| 65 | 6.9 | **กลุ่มงาน Logistic** | 1d | 2025-05-28 | 2025-05-28 |  | 70d |  |
| 66 |  | ออกแบบแบบฟอร์มการประเมินคุณภาพการส่งมอบสินค้า/บริการ Vendor-N (G.Logistics) | 1d | 2025-05-28 | 2025-05-28 | 62SS | 70d |  |
| 67 | 6.10 | **กลุ่มงาน Manufacturing** | 1d | 2025-05-28 | 2025-05-28 |  | 70d |  |
| 68 |  | ออกแบบแบบฟอร์มการประเมินคุณภาพการส่งมอบสินค้า/บริการ Manufacturing_N | 1d | 2025-05-28 | 2025-05-28 | 62SS | 70d |  |
| 69 | 6.11 | **กลุ่มงาน Commercial** | 1d | 2025-05-28 | 2025-05-28 |  | 70d |  |
| 70 |  | ออกแบบแบบฟอร์มการประเมินคุณภาพการส่งมอบสินค้า/บริการ Commercial | 1d | 2025-05-28 | 2025-05-28 | 62SS | 70d |  |

| ID | WBS | Task | Duration | Start | Finish | Predecessors | Total float |
| --- | --- | --- | --- | --- | --- | --- | --- |
| 71 | 6.12 | **กลุ่มงาน Outsource** | 1d | 2025-05-28 | 2025-05-28 |  | 0d |
| 72 |  | ออกแบบแบบฟอร์มการประเมินคุณภาพการส่งมอบสินค้า/บริการ (Outsource) | 1d | 2025-05-28 | 2025-05-28 | 62SS | 0d |
| 73 | 6.13 | **กลุ่มงาน Raw material** | 1d | 2025-05-29 | 2025-05-29 |  | 0d |
| 74 |  | ออกแบบแบบฟอร์มการประเมินคุณภาพการส่งมอบสินค้า/บริการ (RAW MATERIAL) | 1d | 2025-05-29 | 2025-05-29 | 72 | 0d |
| 75 | 6.14 | **กลุ่มงาน Packaging** | 1d | 2025-05-29 | 2025-05-29 |  | 0d |
| 76 |  | ออกแบบแบบฟอร์มการประเมินคุณภาพการส่งมอบสินค้า/บริการ (PKG) | 1d | 2025-05-29 | 2025-05-29 | 74SS | 0d |
| 77 | 6.15 | **กลุ่มงาน Agile** | 1d | 2025-05-30 | 2025-05-30 |  | 0d |
| 78 |  | ออกแบบแบบฟอร์มการประเมินคุณภาพการส่งมอบสินค้า/บริการ (AGILE) | 1d | 2025-05-30 | 2025-05-30 | 76 | 0d |
| 79 | 6.16 | **กลุ่มงาน Property** | 1d | 2025-05-30 | 2025-05-30 |  | 68d |
| 80 |  | ออกแบบแบบฟอร์มการประเมินคุณภาพการส่งมอบสินค้า/บริการ (PROPERTY) | 1d | 2025-05-30 | 2025-05-30 | 78SS | 68d |
| 81 | 6.17 | **กลุ่มงาน Energy and Chemical** | 1d | 2025-05-30 | 2025-05-30 |  | 0d |
| 82 |  | ออกแบบแบบฟอร์มการประเมินคุณภาพการส่งมอบสินค้า/บริการ (ENERGY_CHEMICAL) | 1d | 2025-05-30 | 2025-05-30 | 78SS | 0d |
| 83 |  | จัดทำรายละเอียดการออกแบบระบบ (Design Specification) | 3d | 2025-06-02 | 2025-06-04 | 82 | 0d |
| 84 |  | ประชุมกับ Key User เพื่อสรุปยืนยัน Design Specification | 1d | 2025-06-05 | 2025-06-05 | 83 | 0d |
| 85 |  | Key User ตรวจสอบยืนยัน Design Specification | 1d | 2025-06-06 | 2025-06-06 | 84 | 0d |
| 86 |  | อนุมัติและยืนยัน Design Specification (Milestone #6) | 1d | 2025-06-09 | 2025-06-09 | 85 | 0d |
| 87 | 7 | **Implementation & UT** | 28d | 2025-06-10 | 2025-07-17 |  | 0d |
| 88 | 7.1 | **พัฒนาแบบประเมินบน Microsoft Form** | 2d | 2025-06-10 | 2025-06-11 |  | 0d |
| 89 | 7.1.1 | **กลุ่มงาน IT** | 1d | 2025-06-10 | 2025-06-10 |  | 0d |
| 90 |  | พัฒนาแบบฟอร์มการประเมินคุณภาพการส่งมอบสินค้า/บริการ (For IT User) | 1d | 2025-06-10 | 2025-06-10 | 86 | 0d |
| 91 |  | ทดสอบแบบฟอร์มการประเมินคุณภาพการส่งมอบสินค้า/บริการ (For IT User) | 1d | 2025-06-10 | 2025-06-10 | 90SS | 60d |
| 92 | 7.1.2 | **กลุ่มงาน WASTE** | 1d | 2025-06-10 | 2025-06-10 |  | 61d |
| 93 |  | พัฒนาแบบฟอร์มการประเมินคุณภาพการส่งมอบสินค้า/บริการ WASTE | 1d | 2025-06-10 | 2025-06-10 | 90SS | 61d |
| 94 |  | ทดสอบแบบฟอร์มการประเมินคุณภาพการส่งมอบสินค้า/บริการ (For IT User) | 1d | 2025-06-10 | 2025-06-10 | 90SS | 61d |
| 95 | 7.1.3 | **กลุ่มงาน Logistic** | 1d | 2025-06-10 | 2025-06-10 |  | 61d |
| 96 |  | พัฒนาแบบฟอร์มการประเมินคุณภาพการส่งมอบสินค้า/บริการ Vendor-N (G.Logistics) | 1d | 2025-06-10 | 2025-06-10 | 90SS | 61d |
| 97 |  | ทดสอบแบบฟอร์มการประเมินคุณภาพการส่งมอบสินค้า/บริการ Vendor-N (G.Logistics) | 1d | 2025-06-10 | 2025-06-10 | 90SS | 61d |
| 98 | 7.1.4 | **กลุ่มงาน Manufacturing** | 1d | 2025-06-10 | 2025-06-10 |  | 61d |
| 99 |  | พัฒนาแบบฟอร์มการประเมินคุณภาพการส่งมอบสินค้า/บริการ Manufacturing_N | 1d | 2025-06-10 | 2025-06-10 | 90SS | 61d |
| 100 |  | ทดสอบแบบฟอร์มการประเมินคุณภาพการส่งมอบสินค้า/บริการ Manufacturing_N | 1d | 2025-06-10 | 2025-06-10 | 90SS | 61d |
| 101 | 7.1.5 | **กลุ่มงาน Commercial** | 1d | 2025-06-10 | 2025-06-10 |  | 61d |
| 102 |  | พัฒนาแบบฟอร์มการประเมินคุณภาพการส่งมอบสินค้า/บริการ Commercial | 1d | 2025-06-10 | 2025-06-10 | 90SS | 61d |
| 103 |  | ทดสอบแบบฟอร์มการประเมินคุณภาพการส่งมอบสินค้า/บริการ Commercial | 1d | 2025-06-10 | 2025-06-10 | 90SS | 61d |
| 104 | 7.1.6 | **กลุ่มงาน Outsource** | 1d | 2025-06-10 | 2025-06-10 |  | 0d |
| 105 |  | พัฒนาแบบฟอร์มการประเมินคุณภาพการส่งมอบสินค้า/บริการ (Outsource) | 1d | 2025-06-10 | 2025-06-10 | 90SS | 61d |
| 106 |  | ทดสอบแบบฟอร์มการประเมินคุณภาพการส่งมอบสินค้า/บริการ (Outsource) | 1d | 2025-06-10 | 2025-06-10 | 90SS | 0d |
| 107 | 7.1.7 | **กลุ่มงาน Raw material** | 1d | 2025-06-11 | 2025-06-11 |  | 0d |
| 108 |  | พัฒนาแบบฟอร์มการประเมินคุณภาพการส่งมอบสินค้า/บริการ RAW MATERIAL | 1d | 2025-06-11 | 2025-06-11 | 106 | 0d |
| 109 |  | ทดสอบแบบฟอร์มการประเมินคุณภาพการส่งมอบสินค้า/บริการ RAW MATERIAL | 1d | 2025-06-11 | 2025-06-11 | 108SS | 36d |
| 110 | 7.1.8 | **กลุ่มงาน Packaging** | 1d | 2025-06-11 | 2025-06-11 |  | 60d |
| 111 |  | พัฒนาแบบฟอร์มการประเมินคุณภาพการส่งมอบสินค้า/บริการ PKG | 1d | 2025-06-11 | 2025-06-11 | 108SS | 60d |
| 112 |  | ทดสอบแบบฟอร์มการประเมินคุณภาพการส่งมอบสินค้า/บริการ PKG | 1d | 2025-06-11 | 2025-06-11 | 108SS | 60d |
| 113 | 7.1.9 | **กลุ่มงาน Agile** | 1d | 2025-06-11 | 2025-06-11 |  | 60d |
| 114 |  | พัฒนาแบบฟอร์มการประเมินคุณภาพการส่งมอบสินค้า/บริการ AGILE | 1d | 2025-06-11 | 2025-06-11 | 108SS | 60d |
| 115 |  | ทดสอบแบบฟอร์มการประเมินคุณภาพการส่งมอบสินค้า/บริการ AGILE | 1d | 2025-06-11 | 2025-06-11 | 108SS | 60d |
| 116 | 7.1.10 | **กลุ่มงาน Property** | 1d | 2025-06-11 | 2025-06-11 |  | 60d |
| 117 |  | พัฒนาแบบฟอร์มการประเมินคุณภาพการส่งมอบสินค้า/บริการ PROPERTY | 1d | 2025-06-11 | 2025-06-11 | 108SS | 60d |
| 118 |  | ทดสอบแบบฟอร์มการประเมินคุณภาพการส่งมอบสินค้า/บริการ PROPERTY | 1d | 2025-06-11 | 2025-06-11 | 108SS | 60d |
| 119 | 7.1.11 | **กลุ่มงาน Energy and Chemical** | 1d | 2025-06-11 | 2025-06-11 |  | 0d |
| 120 |  | พัฒนาแบบฟอร์มการประเมินคุณภาพการส่งมอบสินค้า/บริการ ENERGY_CHEMICAL | 1d | 2025-06-11 | 2025-06-11 | 108SS | 60d |
| 121 |  | ทดสอบแบบฟอร์มการประเมินคุณภาพการส่งมอบสินค้า/บริการ ENERGY_CHEMICAL | 1d | 2025-06-11 | 2025-06-11 | 108SS | 0d |
| 122 | 7.2 | **พัฒนาแบบประเมินของกลุ่มงาน IT** | 1d | 2025-06-11 | 2025-06-11 |  | 60d |
| 123 |  | พัฒนา Flow แบบประเมินคุณภาพการส่งมอบสินค้า/บริการ (For IT User) บน Power Automate | 1d | 2025-06-11 | 2025-06-11 | 91 | 60d |
| 124 |  | ทดสอบการเชื่อมต่อระหว่าง Microsoft Form และ Power Automate | 1d | 2025-06-11 | 2025-06-11 | 123SS | 60d |
| 125 |  | พัฒนา List สำหรับจัดเก็บข้อมูลแบบประเมินคุณภาพการส่งมอบสินค้า/บริการ (For IT User) บน Sharepoint | 1d | 2025-06-11 | 2025-06-11 | 123SS | 60d |
| 126 |  | ทดสอบการเชื่อมต่อระหว่าง Microsoft Form ,Power Automate และ Sharepoint List | 1d | 2025-06-11 | 2025-06-11 | 123SS | 60d |
| 127 | 7.3 | **พัฒนาแบบประเมินของกลุ่มงาน WASTE** | 1d | 2025-06-11 | 2025-06-11 |  | 60d |
| 128 |  | พัฒนา Flow แบบประเมินคุณภาพการส่งมอบสินค้า/บริการ WASTE บน Power Automate | 1d | 2025-06-11 | 2025-06-11 | 123SS | 60d |
| 129 |  | ทดสอบการเชื่อมต่อระหว่าง Microsoft Form และ Power Automate | 1d | 2025-06-11 | 2025-06-11 | 123SS | 60d |
| 130 |  | พัฒนา List สำหรับจัดเก็บข้อมูลแบบประเมินคุณภาพการส่งมอบสินค้า/บริการ WASTE บน Sharepoint | 1d | 2025-06-11 | 2025-06-11 | 123SS | 60d |
| 131 |  | ทดสอบการเชื่อมต่อระหว่าง Microsoft Form ,Power Automate และ Sharepoint List | 1d | 2025-06-11 | 2025-06-11 | 123SS | 60d |
| 132 | 7.4 | **พัฒนาแบบประเมินของกลุ่มงาน Logistic** | 1d | 2025-06-11 | 2025-06-11 |  | 60d |
| 133 |  | พัฒนา Flow แบบประเมินคุณภาพการส่งมอบสินค้า/บริการ Vendor-N (G.Logistics) บน Power Automate | 1d | 2025-06-11 | 2025-06-11 | 123SS | 60d |
| 134 |  | ทดสอบการเชื่อมต่อระหว่าง Microsoft Form และ Power Automate | 1d | 2025-06-11 | 2025-06-11 | 123SS | 60d |
| 135 |  | พัฒนา List สำหรับจัดเก็บข้อมูลแบบประเมินคุณภาพการส่งมอบสินค้า/บริการ Vendor-N (G.Logistics) บน Sharepoint | 1d | 2025-06-11 | 2025-06-11 | 123SS | 60d |
| 136 |  | ทดสอบการเชื่อมต่อระหว่าง Microsoft Form ,Power Automate และ Sharepoint List | 1d | 2025-06-11 | 2025-06-11 | 123SS | 60d |
| 137 | 7.5 | **พัฒนาแบบประเมินของกลุ่มงาน Manufaturing** | 1d | 2025-06-11 | 2025-06-11 |  | 60d |
| 138 |  | พัฒนา Flow แบบประเมินคุณภาพการส่งมอบสินค้า/บริการ Manufacturing_N บน Power Automate | 1d | 2025-06-11 | 2025-06-11 | 123SS | 60d |
| 139 |  | ทดสอบการเชื่อมต่อระหว่าง Microsoft Form และ Power Automate | 1d | 2025-06-11 | 2025-06-11 | 123SS | 60d |
| 140 |  | พัฒนา List สำหรับจัดเก็บข้อมูลแบบประเมินคุณภาพการส่งมอบสินค้า/บริการ Manufacturing_N บน Sharepoint | 1d | 2025-06-11 | 2025-06-11 | 123SS | 60d |

| ID | WBS | Task | Duration | Start | Finish | Predecessors | Total float |
| --- | --- | --- | --- | --- | --- | --- | --- |
| 141 |  | ทดสอบการเชื่อมต่อระหว่าง Microsoft Form ,Power Automate และ Sharepoint List | 1d | 2025-06-11 | 2025-06-11 | 123SS | 60d |
| 142 | 7.6 | **พัฒนาแบบประเมินของกลุ่มงาน Commercial** | 1d | 2025-06-11 | 2025-06-11 |  | 60d |
| 143 |  | พัฒนา Flow แบบประเมินคุณภาพการส่งมอบสินค้า/บริการ Commercial บน Power Automate | 1d | 2025-06-11 | 2025-06-11 | 123SS | 60d |
| 144 |  | ทดสอบการเชื่อมต่อระหว่าง Microsoft Form และ Power Automate | 1d | 2025-06-11 | 2025-06-11 | 123SS | 60d |
| 145 |  | พัฒนา List สำหรับจัดเก็บข้อมูลแบบประเมินคุณภาพการส่งมอบสินค้า/บริการ Commercial บน Sharepoint | 1d | 2025-06-11 | 2025-06-11 | 123SS | 60d |
| 146 |  | ทดสอบการเชื่อมต่อระหว่าง Microsoft Form ,Power Automate และ Sharepoint List | 1d | 2025-06-11 | 2025-06-11 | 123SS | 60d |
| 147 | 7.7 | **พัฒนาแบบประเมินของกลุ่มงาน Outsource** | 1d | 2025-06-11 | 2025-06-11 |  | 60d |
| 148 |  | พัฒนา Flow แบบประเมินคุณภาพการส่งมอบสินค้า/บริการ (Outsource) บน Power Automate | 1d | 2025-06-11 | 2025-06-11 | 123SS | 60d |
| 149 |  | ทดสอบการเชื่อมต่อระหว่าง Microsoft Form และ Power Automate | 1d | 2025-06-11 | 2025-06-11 | 123SS | 60d |
| 150 |  | พัฒนา List สำหรับจัดเก็บข้อมูลแบบประเมินคุณภาพการส่งมอบสินค้า/บริการ (Outsource) บน Sharepoint | 1d | 2025-06-11 | 2025-06-11 | 123SS | 60d |
| 151 |  | ทดสอบการเชื่อมต่อระหว่าง Microsoft Form ,Power Automate และ Sharepoint List | 1d | 2025-06-11 | 2025-06-11 | 123SS | 60d |
| 152 | 7.8 | **พัฒนาแบบประเมินของกลุ่มงาน Raw material** | 1d | 2025-06-12 | 2025-06-12 |  | 36d |
| 153 |  | พัฒนา Flow แบบประเมินคุณภาพการส่งมอบสินค้า/บริการ RAW MATERIAL บน Power Automate | 1d | 2025-06-12 | 2025-06-12 | 109 | 36d |
| 154 |  | ทดสอบการเชื่อมต่อระหว่าง Microsoft Form และ Power Automate | 1d | 2025-06-12 | 2025-06-12 | 153SS | 59d |
| 155 |  | พัฒนา List สำหรับจัดเก็บข้อมูลแบบประเมินคุณภาพการส่งมอบสินค้า/บริการ RAW MATERIAL บน Sharepoint | 1d | 2025-06-12 | 2025-06-12 | 153SS | 59d |
| 156 |  | ทดสอบการเชื่อมต่อระหว่าง Microsoft Form ,Power Automate และ Sharepoint List | 1d | 2025-06-12 | 2025-06-12 | 153SS | 59d |
| 157 | 7.9 | **พัฒนาแบบประเมินของกลุ่มงาน Packaging** | 1d | 2025-06-12 | 2025-06-12 |  | 59d |
| 158 |  | พัฒนา Flow แบบประเมินคุณภาพการส่งมอบสินค้า/บริการ PKG บน Power Automate | 1d | 2025-06-12 | 2025-06-12 | 153SS | 59d |
| 159 |  | ทดสอบการเชื่อมต่อระหว่าง Microsoft Form และ Power Automate | 1d | 2025-06-12 | 2025-06-12 | 153SS | 59d |
| 160 |  | พัฒนา List สำหรับจัดเก็บข้อมูลแบบประเมินคุณภาพการส่งมอบสินค้า/บริการ PKG บน Sharepoint | 1d | 2025-06-12 | 2025-06-12 | 153SS | 59d |
| 161 |  | ทดสอบการเชื่อมต่อระหว่าง Microsoft Form ,Power Automate และ Sharepoint List | 1d | 2025-06-12 | 2025-06-12 | 153SS | 59d |
| 162 | 7.10 | **พัฒนาแบบประเมินของกลุ่มงาน Agile** | 1d | 2025-06-12 | 2025-06-12 |  | 59d |
| 163 |  | พัฒนา Flow แบบประเมินคุณภาพการส่งมอบสินค้า/บริการ AGILE บน Power Automate | 1d | 2025-06-12 | 2025-06-12 | 153SS | 59d |
| 164 |  | ทดสอบการเชื่อมต่อระหว่าง Microsoft Form และ Power Automate | 1d | 2025-06-12 | 2025-06-12 | 153SS | 59d |
| 165 |  | พัฒนา List สำหรับจัดเก็บข้อมูลแบบประเมินคุณภาพการส่งมอบสินค้า/บริการ AGILE บน Sharepoint | 1d | 2025-06-12 | 2025-06-12 | 153SS | 59d |
| 166 |  | ทดสอบการเชื่อมต่อระหว่าง Microsoft Form ,Power Automate และ Sharepoint List | 1d | 2025-06-12 | 2025-06-12 | 153SS | 59d |
| 167 | 7.11 | **พัฒนาแบบประเมินของกลุ่มงาน Property** | 1d | 2025-06-12 | 2025-06-12 |  | 59d |
| 168 |  | พัฒนา Flow แบบประเมินคุณภาพการส่งมอบสินค้า/บริการ PROPERTY บน Power Automate | 1d | 2025-06-12 | 2025-06-12 | 153SS | 59d |
| 169 |  | ทดสอบการเชื่อมต่อระหว่าง Microsoft Form และ Power Automate | 1d | 2025-06-12 | 2025-06-12 | 153SS | 59d |
| 170 |  | พัฒนา List สำหรับจัดเก็บข้อมูลแบบประเมินคุณภาพการส่งมอบสินค้า/บริการ PROPERTY บน Sharepoint | 1d | 2025-06-12 | 2025-06-12 | 153SS | 59d |
| 171 |  | ทดสอบการเชื่อมต่อระหว่าง Microsoft Form ,Power Automate และ Sharepoint List | 1d | 2025-06-12 | 2025-06-12 | 153SS | 59d |
| 172 | 7.12 | **พัฒนาแบบประเมินของกลุ่มงาน Energy and Chemical** | 1d | 2025-06-12 | 2025-06-12 |  | 36d |
| 173 |  | พัฒนา Flow แบบประเมินคุณภาพการส่งมอบสินค้า/บริการ ENERGY_CHEMICAL บน Power Automate | 1d | 2025-06-12 | 2025-06-12 | 153SS | 59d |
| 174 |  | ทดสอบการเชื่อมต่อระหว่าง Microsoft Form และ Power Automate | 1d | 2025-06-12 | 2025-06-12 | 153SS | 59d |
| 175 |  | พัฒนา List สำหรับจัดเก็บข้อมูลแบบประเมินคุณภาพการส่งมอบสินค้า/บริการ ENERGY_CHEMICAL บน Sharepoint | 1d | 2025-06-12 | 2025-06-12 | 153SS | 59d |
| 176 |  | ทดสอบการเชื่อมต่อระหว่าง Microsoft Form ,Power Automate และ Sharepoint List | 1d | 2025-06-12 | 2025-06-12 | 153SS | 36d |
| 177 |  | พัฒนาโปรแกรมสำหรับดึงข้อมูลจาก Sharepoint List เก็บลง Database | 2d | 2025-06-13 | 2025-06-16 | 176 | 36d |
| 178 |  | ทดสอบการเชื่อมต่อโปรแกรมระหว่าง Sharepoint List และ Database | 2d | 2025-06-17 | 2025-06-18 | 177 | 36d |
| 179 |  | พัฒนา Model ใช้สำหรับนำไปแสดงผลรายงาน | 14d | 2025-06-19 | 2025-07-08 | 178 | 36d |
| 180 |  | พัฒนา Dashboard | 5d | 2025-07-09 | 2025-07-15 | 179 | 36d |
| 181 | 7.17 | **จัดทำ Draft Process flow และเอกสารที่เกี่ยวข้อง รองรับกระบวนการใหม่** | 22d | 2025-06-17 | 2025-07-16 |  | 0d |
| 182 |  | จัดทำเอกสาร Business Process Flow | 16d | 2025-06-17 | 2025-07-08 | 121FS+3d | 0d |
| 183 |  | ส่งมอบ UPM Sign-off และ Draf of ARIS Flow ให้กับหน่วยงาน BPM | 3d | 2025-07-09 | 2025-07-11 | 182 | 0d |
| 184 |  | จัดเก็บเอกสารเข้าระบบ ISO และส่งมอบเอกสารให้หน่วยงาน BPM | 2d | 2025-07-14 | 2025-07-15 | 183 | 0d |
| 185 |  | ส่งมอบBPM Sign-off Draft Process Flow และเอกสารที่เกี่ยวข้อง (Milestone #7) | 1d | 2025-07-16 | 2025-07-16 | 184 | 0d |
| 186 |  | ส่งมอบระบบงานที่พัฒนาเรียบร้อยแล้ว (Milestone #8) | 1d | 2025-07-17 | 2025-07-17 | 185 | 0d |
| 187 | 8 | **Test And Trainning Key User** | 11d | 2025-07-18 | 2025-08-01 |  | 0d |
| 188 |  | จัดเตรียม Environment Test | 1d | 2025-07-18 | 2025-07-18 | 186 | 0d |
| 189 |  | จัดทำเอกสารการฝึกอบรมสำหรับ Key User (Trainng Document) | 1d | 2025-07-21 | 2025-07-21 | 188 | 0d |
| 190 |  | ดำเนินการทดสอบ UAT และ Training | 6d | 2025-07-22 | 2025-07-29 | 189 | 0d |
| 191 |  | แก้ไข Defect จาก UAT | 2d | 2025-07-30 | 2025-07-31 | 190 | 0d |
| 192 |  | UAT Sign-off (Milestone #9) | 1d | 2025-08-01 | 2025-08-01 | 191 | 0d |
| 193 | 9 | **Deploy** | 3d | 2025-08-04 | 2025-08-06 |  | 0d |
| 194 |  | จัดทำแผน Go-Live Plan | 1d | 2025-08-04 | 2025-08-04 | 192 | 0d |
| 195 |  | ตรวจสอบความพร้อมในการ Go-Live (Go/No-Go Checklist) | 1d | 2025-08-05 | 2025-08-05 | 194 | 0d |
| 196 |  | ดำเนินการ Go-Live(Milestone #10) | 1d | 2025-08-06 | 2025-08-06 | 195 | 0d |
| 197 | 10 | **Stabilization** | 15d | 2025-08-07 | 2025-08-27 |  | 0d |
| 198 |  | สนับสนุนการใช้งาน หลัง Go-Live (หลังจบโครงการ 1 Month) | 15d | 2025-08-07 | 2025-08-27 | 196 | 0d |
| 199 |  | เก็บ Issues Log บน ระบบจริงที่ใช้งาน และแก้ไข | 15d | 2025-08-07 | 2025-08-27 | 198SS | 0d |
| 200 | 11 | **Project Closure** | 5d | 2025-08-28 | 2025-09-03 |  | 0d |
| 201 |  | จัดทำ Lesson Learned โครงการ | 1d | 2025-08-28 | 2025-08-28 | 199 | 0d |
| 202 |  | ส่งมอบโครงการ สู่งานประจำ (Handover) | 1d | 2025-08-29 | 2025-08-29 | 201 | 0d |
| 203 |  | จัดเก็บเอกสาร Project Files ทั้งหมด | 1d | 2025-09-01 | 2025-09-01 | 202 | 0d |
| 204 |  | กำหนดระยะเวลาในการวัด Outcome ของโครงการ (Project KPI) | 1d | 2025-09-02 | 2025-09-02 | 203 | 0d |
| 205 |  | ดำเนินการปิดโครงการ (Milestone #11) | 1d | 2025-09-03 | 2025-09-03 | 204 | 0d |

## Version 2 (data date 2025-05-13, saved 2025-05-19, file Vendor Evaluation Dashboard V2_Plan_ACT.mpp)

Last finish stays 2025-09-03. Complete tasks 0 → 16.

Changed:

| ID | Task | Start | Finish | Duration | Complete | Total float | Predecessors | Other |
| --- | --- | --- | --- | --- | --- | --- | --- | --- |
| 1 | **Milestones** | 2025-04-30 A |  | 90d → 84d |  |  |  |  |
| 2 | เสนอ Project Charter ให้ผู้บริหารอนุมัติ (Milestone #1) | 2025-04-30 A | 2025-04-30 A |  | 0% → 100% | 90d → none |  |  |
| 3 | ประชุม Kick off โครงการ เพื่อสื่อสารแผนงานโครงการ (Milestone #2) | 2025-05-02 A | 2025-05-02 A |  | 0% → 100% | 88d → none |  |  |
| 6 | ส่งมอบเอกสาร Business process risk management และเอกสารที่เกี่ยวข้อง (Milestone #5) | 2025-05-27 → 2025-06-09 (+13d) | 2025-05-27 → 2025-06-09 (+13d) |  |  | 71d → 59d |  |  |
| 13 | **Project Preparation** | 2025-04-15 A | 2025-05-02 A | 14d → 13d | 0% → 100% | 0d → none |  |  |
| 14 | จัดทำ Project Charter | 2025-04-15 A | 2025-04-29 A |  | 0% → 100% | 0d → none |  | resources Aunchala; Sutripat → Aunchala Kengkarunkij; Sutripat Ngamjittrong |
| 15 | เสนอ Project Charter ให้ผู้บริหารอนุมัติ (Milestone #1) | 2025-04-30 A | 2025-04-30 A |  | 0% → 100% | 0d → none |  | resources Aunchala; Sutripat → Aunchala Kengkarunkij; Sutripat Ngamjittrong |
| 16 | ประชุม Kick off โครงการ เพื่อสื่อสารแผนงานโครงการ (Milestone #2) | 2025-05-02 A | 2025-05-02 A |  | 0% → 100% | 0d → none | 15FS+1d → 15 | resources Aunchala; Sutripat → Aunchala Kengkarunkij; Sutripat Ngamjittrong |
| 17 | **ประชุมติดตามความคืบหน้าของโครงการ (Weekly)** | 2025-04-16 A |  | 96d → 90d | 0% → 20% |  |  |  |
| 18 | ประชุมติดตามความคืบหน้าของโครงการ (Weekly) 1 | 2025-04-16 A | 2025-04-16 A |  | 0% → 100% | 100d → none |  |  |
| 19 | ประชุมติดตามความคืบหน้าของโครงการ (Weekly) 2 | 2025-04-23 A | 2025-04-23 A |  | 0% → 100% | 95d → none |  |  |
| 20 | ประชุมติดตามความคืบหน้าของโครงการ (Weekly) 3 | 2025-04-30 A | 2025-04-30 A |  | 0% → 100% | 90d → none |  |  |
| 21 | ประชุมติดตามความคืบหน้าของโครงการ (Weekly) 4 | 2025-05-07 A | 2025-05-07 A |  | 0% → 100% | 85d → none |  |  |
| 38 | **รายงานความคืบหน้าของโครงการใน Tech.PMO (Monthly)** | 2025-04-25 A |  | 91d → 85d | 0% → 20% |  |  |  |
| 39 | รายงานความคืบหน้าของโครงการใน Tech.PMO (Monthly) 1 | 2025-04-25 A | 2025-04-25 A |  | 0% → 100% | 93d → none |  |  |
| 44 | **Requirement Gathering** | 2025-05-06 A |  | 8d → 7d | 0% → 75% |  |  |  |
| 45 | ศึกษากระบวนการทำงานในปัจจุบัน (As Is) | 2025-05-06 A | 2025-05-07 A |  | 0% → 100% | 0d → none |  | resources Aunchala; Sutripat → Aunchala Kengkarunkij; Sutripat Ngamjittrong |
| 46 | ศึกษาปัญหาของการทำงานในปัจจุบัน | 2025-05-06 A | 2025-05-07 A |  | 0% → 100% | 85d → none |  | resources Aunchala; Sutripat → Aunchala Kengkarunkij; Sutripat Ngamjittrong |
| 47 | จัดประชุมสัมภาษณ์ตัวแทนผู้ปฏิบัติงานเพื่อค้นหาความต้องการ (Interview Key Users) | 2025-05-06 A | 2025-05-07 A |  | 0% → 100% | 0d → none |  | resources Aunchala; Chakhrit; Sutripat; Tanchanok; Pornpun → Aunchala Kengkarunkij; Chakhrit Kru-Usaha; Pornpun Panyapong; Sutripat Ngamjittrong; Tanchanok Sunsurat |
| 48 | สรุปจัดทำรายละเอียดความต้องการ (Develop Requirement Specification) | 2025-05-08 A | 2025-05-08 A |  | 0% → 100% | 0d → none |  | resources Aunchala; Sutripat → Aunchala Kengkarunkij; Sutripat Ngamjittrong |
| 49 | ประชุมกับ User เพื่อสรุปยืนยัน Requirement | 2025-05-09 A | 2025-05-09 A |  | 0% → 100% | 0d → none |  | resources Aunchala; Chakhrit; Sutripat; Tanchanok; Pornpun → Aunchala Kengkarunkij; Chakhrit Kru-Usaha; Pornpun Panyapong; Sutripat Ngamjittrong; Tanchanok Sunsurat |
| 50 | แก้ไขเอกสาร Requirement Specification #ครั้งที่ 1 | 2025-05-13 A | 2025-05-13 A |  | 0% → 100% | 0d → none | 49FS+1d → 49 | resources Aunchala; Sutripat → Aunchala Kengkarunkij; Sutripat Ngamjittrong |
| 51 | อนุมัติและยืนยัน Requirement Specification (Milestone #3) |  |  |  |  |  |  | resources Aunchala → Aunchala Kengkarunkij |
| 52 | กำหนดระยะเวลาการเก็บรักษาข้อมูล (Data Retention) |  |  |  |  |  |  | resources Aunchala; Chakhrit; Sutripat; Tanchanok → Aunchala Kengkarunkij; Chakhrit Kru-Usaha; Sutripat Ngamjittrong; Tanchanok Sunsurat; Pornpun Panyapong |
| 53 | อนุมัติและยืนยัน Data Retention Sign-Off Form (Milestone #4) |  |  |  |  |  |  | resources Aunchala → Aunchala Kengkarunkij |
| 54 | **Design** |  |  | 17d → 16d |  |  |  |  |
| 55 | ออกแบบสถาปัตยกรรมระบบ (Solution Architecture) |  |  |  |  | 68d → 64d |  | resources Sutripat → Sutripat Ngamjittrong |
| 56 | ออกแบบ Data Flow ของระบบงาน |  |  |  |  | 72d → 68d |  | resources Sutripat → Sutripat Ngamjittrong |
| 57 | ออกแบบโครงสร้างฐานข้อมูล (DB Structure and Schema) |  |  |  |  | 68d → 64d |  | resources Sutripat → Sutripat Ngamjittrong |
| 58 | Business process management and Business process risk management training for User |  | 2025-05-19 → 2025-05-20 (+1d) | 1d → 2d |  |  |  | resources Aunchala; Tanchanok; Krittalak → Aunchala Kengkarunkij; Krittalak Kaewnissai; Tanchanok Sunsurat |
| 59 | จัดทำเอกสาร Business process risk management | 2025-05-20 → 2025-05-21 (+1d) | 2025-05-26 → 2025-06-06 (+11d) | 5d → 12d |  |  |  | resources Tanchanok; Aunchala → Aunchala Kengkarunkij; Tanchanok Sunsurat |
| 60 | ส่งมอบเอกสาร Business process risk management และเอกสารที่เกี่ยวข้อง (Milestone #5) | 2025-05-27 → 2025-06-09 (+13d) | 2025-05-27 → 2025-06-09 (+13d) |  |  |  |  | resources Aunchala → Aunchala Kengkarunkij; Tanchanok Sunsurat |
| 62 | ออกแบบแบบฟอร์มการประเมินคุณภาพการส่งมอบสินค้า/บริการ (For IT User) |  |  |  |  | 0d → 33d | 60 → 53FS+8d | resources Aunchala; Tanchanok → Aunchala Kengkarunkij; Tanchanok Sunsurat |
| 64 | ออกแบบแบบฟอร์มการประเมินคุณภาพการส่งมอบสินค้า/บริการ WASTE |  |  |  |  | 70d → 66d |  | resources Aunchala; Tanchanok → Aunchala Kengkarunkij; Tanchanok Sunsurat |
| 66 | ออกแบบแบบฟอร์มการประเมินคุณภาพการส่งมอบสินค้า/บริการ Vendor-N (G.Logistics) |  |  |  |  | 70d → 66d |  | resources Aunchala; Tanchanok → Aunchala Kengkarunkij; Tanchanok Sunsurat |
| 68 | ออกแบบแบบฟอร์มการประเมินคุณภาพการส่งมอบสินค้า/บริการ Manufacturing_N |  |  |  |  | 70d → 66d |  | resources Aunchala; Tanchanok → Aunchala Kengkarunkij; Tanchanok Sunsurat |
| 70 | ออกแบบแบบฟอร์มการประเมินคุณภาพการส่งมอบสินค้า/บริการ Commercial |  |  |  |  | 70d → 66d |  | resources Aunchala; Tanchanok → Aunchala Kengkarunkij; Tanchanok Sunsurat |
| 72 | ออกแบบแบบฟอร์มการประเมินคุณภาพการส่งมอบสินค้า/บริการ (Outsource) |  |  |  |  | 0d → 33d |  | resources Aunchala; Tanchanok → Aunchala Kengkarunkij; Tanchanok Sunsurat |
| 74 | ออกแบบแบบฟอร์มการประเมินคุณภาพการส่งมอบสินค้า/บริการ (RAW MATERIAL) |  |  |  |  | 0d → 33d |  | resources Aunchala; Tanchanok → Aunchala Kengkarunkij; Tanchanok Sunsurat |
| 76 | ออกแบบแบบฟอร์มการประเมินคุณภาพการส่งมอบสินค้า/บริการ (PKG) |  |  |  |  | 0d → 33d |  | resources Aunchala; Tanchanok → Aunchala Kengkarunkij; Tanchanok Sunsurat |
| 78 | ออกแบบแบบฟอร์มการประเมินคุณภาพการส่งมอบสินค้า/บริการ (AGILE) |  |  |  |  | 0d → 33d |  | resources Aunchala; Tanchanok → Aunchala Kengkarunkij; Tanchanok Sunsurat |
| 80 | ออกแบบแบบฟอร์มการประเมินคุณภาพการส่งมอบสินค้า/บริการ (PROPERTY) |  |  |  |  | 68d → 64d |  | resources Aunchala; Tanchanok → Aunchala Kengkarunkij; Tanchanok Sunsurat |
| 82 | ออกแบบแบบฟอร์มการประเมินคุณภาพการส่งมอบสินค้า/บริการ (ENERGY_CHEMICAL) |  |  |  |  | 0d → 33d |  | resources Aunchala; Tanchanok → Aunchala Kengkarunkij; Tanchanok Sunsurat |
| 83 | จัดทำรายละเอียดการออกแบบระบบ (Design Specification) |  |  | 3d → 2d |  | 0d → 33d |  | resources Aunchala; Sutripat → Aunchala Kengkarunkij; Sutripat Ngamjittrong |
| 84 | ประชุมกับ Key User เพื่อสรุปยืนยัน Design Specification |  |  |  |  | 0d → 33d |  | resources Aunchala; Chakhrit; Sutripat; Tanchanok → Aunchala Kengkarunkij; Chakhrit Kru-Usaha; Sutripat Ngamjittrong; Tanchanok Sunsurat; Pornpun Panyapong |
| 85 | Key User ตรวจสอบยืนยัน Design Specification |  |  |  |  | 0d → 33d |  | resources Aunchala; Chakhrit; Sutripat; Tanchanok → Aunchala Kengkarunkij; Chakhrit Kru-Usaha; Sutripat Ngamjittrong; Tanchanok Sunsurat; Pornpun Panyapong |
| 86 | อนุมัติและยืนยัน Design Specification (Milestone #6) |  |  |  |  | 0d → 33d |  | resources Aunchala → Aunchala Kengkarunkij; Sutripat Ngamjittrong |
| 87 | **Implementation & UT** | 2025-06-10 → 2025-06-04 (-6d) |  | 28d → 31d |  |  |  |  |
| 90 | พัฒนาแบบฟอร์มการประเมินคุณภาพการส่งมอบสินค้า/บริการ (For IT User) |  |  |  |  | 0d → 33d |  | resources Aunchala; Tanchanok → Aunchala Kengkarunkij; Tanchanok Sunsurat |
| 91 | ทดสอบแบบฟอร์มการประเมินคุณภาพการส่งมอบสินค้า/บริการ (For IT User) |  |  |  |  | 60d → 57d |  | resources Aunchala; Tanchanok; Chakhrit; Sutripat → Aunchala Kengkarunkij; Chakhrit Kru-Usaha; Sutripat Ngamjittrong; Tanchanok Sunsurat; Pornpun Panyapong |
| 93 | พัฒนาแบบฟอร์มการประเมินคุณภาพการส่งมอบสินค้า/บริการ WASTE |  |  |  |  | 61d → 58d |  | resources Aunchala; Tanchanok → Aunchala Kengkarunkij; Tanchanok Sunsurat |
| 94 | ทดสอบแบบฟอร์มการประเมินคุณภาพการส่งมอบสินค้า/บริการ (For IT User) |  |  |  |  | 61d → 58d |  | resources Aunchala; Sutripat; Tanchanok; Chakhrit → Aunchala Kengkarunkij; Chakhrit Kru-Usaha; Sutripat Ngamjittrong; Tanchanok Sunsurat; Pornpun Panyapong |
| 96 | พัฒนาแบบฟอร์มการประเมินคุณภาพการส่งมอบสินค้า/บริการ Vendor-N (G.Logistics) |  |  |  |  | 61d → 58d |  | resources Aunchala; Tanchanok → Aunchala Kengkarunkij; Tanchanok Sunsurat |
| 97 | ทดสอบแบบฟอร์มการประเมินคุณภาพการส่งมอบสินค้า/บริการ Vendor-N (G.Logistics) |  |  |  |  | 61d → 58d |  | resources Aunchala; Tanchanok; Chakhrit; Sutripat → Aunchala Kengkarunkij; Chakhrit Kru-Usaha; Sutripat Ngamjittrong; Tanchanok Sunsurat; Pornpun Panyapong |
| 99 | พัฒนาแบบฟอร์มการประเมินคุณภาพการส่งมอบสินค้า/บริการ Manufacturing_N |  |  |  |  | 61d → 58d |  | resources Aunchala; Tanchanok → Aunchala Kengkarunkij; Tanchanok Sunsurat |
| 100 | ทดสอบแบบฟอร์มการประเมินคุณภาพการส่งมอบสินค้า/บริการ Manufacturing_N |  |  |  |  | 61d → 58d |  | resources Aunchala; Tanchanok; Chakhrit; Sutripat → Aunchala Kengkarunkij; Chakhrit Kru-Usaha; Sutripat Ngamjittrong; Tanchanok Sunsurat; Pornpun Panyapong |
| 102 | พัฒนาแบบฟอร์มการประเมินคุณภาพการส่งมอบสินค้า/บริการ Commercial |  |  |  |  | 61d → 58d |  | resources Aunchala; Tanchanok → Aunchala Kengkarunkij; Tanchanok Sunsurat |
| 103 | ทดสอบแบบฟอร์มการประเมินคุณภาพการส่งมอบสินค้า/บริการ Commercial |  |  |  |  | 61d → 58d |  | resources Aunchala; Tanchanok; Chakhrit; Sutripat → Aunchala Kengkarunkij; Chakhrit Kru-Usaha; Sutripat Ngamjittrong; Tanchanok Sunsurat; Pornpun Panyapong |
| 105 | พัฒนาแบบฟอร์มการประเมินคุณภาพการส่งมอบสินค้า/บริการ (Outsource) |  |  |  |  | 61d → 58d |  | resources Aunchala; Tanchanok → Aunchala Kengkarunkij; Tanchanok Sunsurat |
| 106 | ทดสอบแบบฟอร์มการประเมินคุณภาพการส่งมอบสินค้า/บริการ (Outsource) |  |  |  |  | 0d → 33d |  | resources Aunchala; Tanchanok; Chakhrit; Sutripat → Aunchala Kengkarunkij; Chakhrit Kru-Usaha; Sutripat Ngamjittrong; Tanchanok Sunsurat; Pornpun Panyapong |
| 108 | พัฒนาแบบฟอร์มการประเมินคุณภาพการส่งมอบสินค้า/บริการ RAW MATERIAL |  |  |  |  | 0d → 33d |  | resources Aunchala; Tanchanok → Aunchala Kengkarunkij; Tanchanok Sunsurat |
| 109 | ทดสอบแบบฟอร์มการประเมินคุณภาพการส่งมอบสินค้า/บริการ RAW MATERIAL |  |  |  |  | 36d → 33d |  | resources Aunchala; Tanchanok; Chakhrit; Sutripat → Aunchala Kengkarunkij; Chakhrit Kru-Usaha; Sutripat Ngamjittrong; Tanchanok Sunsurat; Pornpun Panyapong |
| 111 | พัฒนาแบบฟอร์มการประเมินคุณภาพการส่งมอบสินค้า/บริการ PKG |  |  |  |  | 60d → 57d |  | resources Aunchala; Tanchanok → Aunchala Kengkarunkij; Tanchanok Sunsurat |
| 112 | ทดสอบแบบฟอร์มการประเมินคุณภาพการส่งมอบสินค้า/บริการ PKG |  |  |  |  | 60d → 57d |  | resources Aunchala; Tanchanok; Chakhrit; Sutripat → Aunchala Kengkarunkij; Chakhrit Kru-Usaha; Sutripat Ngamjittrong; Tanchanok Sunsurat; Pornpun Panyapong |
| 114 | พัฒนาแบบฟอร์มการประเมินคุณภาพการส่งมอบสินค้า/บริการ AGILE |  |  |  |  | 60d → 57d |  | resources Aunchala; Tanchanok → Aunchala Kengkarunkij; Tanchanok Sunsurat |
| 115 | ทดสอบแบบฟอร์มการประเมินคุณภาพการส่งมอบสินค้า/บริการ AGILE |  |  |  |  | 60d → 57d |  | resources Aunchala; Tanchanok; Chakhrit; Sutripat → Aunchala Kengkarunkij; Chakhrit Kru-Usaha; Sutripat Ngamjittrong; Tanchanok Sunsurat; Pornpun Panyapong |
| 117 | พัฒนาแบบฟอร์มการประเมินคุณภาพการส่งมอบสินค้า/บริการ PROPERTY |  |  |  |  | 60d → 57d |  | resources Aunchala; Tanchanok → Aunchala Kengkarunkij; Tanchanok Sunsurat |
| 118 | ทดสอบแบบฟอร์มการประเมินคุณภาพการส่งมอบสินค้า/บริการ PROPERTY |  |  |  |  | 60d → 57d |  | resources Aunchala; Tanchanok; Chakhrit; Sutripat → Aunchala Kengkarunkij; Chakhrit Kru-Usaha; Sutripat Ngamjittrong; Tanchanok Sunsurat; Pornpun Panyapong |
| 120 | พัฒนาแบบฟอร์มการประเมินคุณภาพการส่งมอบสินค้า/บริการ ENERGY_CHEMICAL |  |  |  |  | 60d → 57d |  | resources Aunchala; Tanchanok → Aunchala Kengkarunkij; Tanchanok Sunsurat |
| 121 | ทดสอบแบบฟอร์มการประเมินคุณภาพการส่งมอบสินค้า/บริการ ENERGY_CHEMICAL |  |  |  |  | 0d → 57d |  | resources Aunchala; Tanchanok; Chakhrit; Sutripat → Aunchala Kengkarunkij; Chakhrit Kru-Usaha; Sutripat Ngamjittrong; Tanchanok Sunsurat; Pornpun Panyapong |

| ID | Task | Start | Finish | Duration | Total float | Predecessors | Other |
| --- | --- | --- | --- | --- | --- | --- | --- |
| 123 | พัฒนา Flow แบบประเมินคุณภาพการส่งมอบสินค้า/บริการ (For IT User) บน Power Automate |  |  |  | 60d → 57d |  | resources Chakhrit → Chakhrit Kru-Usaha |
| 124 | ทดสอบการเชื่อมต่อระหว่าง Microsoft Form และ Power Automate |  |  |  | 60d → 57d |  | resources Aunchala; Tanchanok; Chakhrit; Sutripat → Aunchala Kengkarunkij; Chakhrit Kru-Usaha; Sutripat Ngamjittrong; Tanchanok Sunsurat; Pornpun Panyapong |
| 125 | พัฒนา List สำหรับจัดเก็บข้อมูลแบบประเมินคุณภาพการส่งมอบสินค้า/บริการ (For IT User) บน Sharepoint |  |  |  | 60d → 57d |  | resources Chakhrit → Chakhrit Kru-Usaha |
| 126 | ทดสอบการเชื่อมต่อระหว่าง Microsoft Form ,Power Automate และ Sharepoint List |  |  |  | 60d → 57d |  | resources Aunchala; Tanchanok; Chakhrit; Sutripat → Aunchala Kengkarunkij; Chakhrit Kru-Usaha; Sutripat Ngamjittrong; Tanchanok Sunsurat; Pornpun Panyapong |
| 128 | พัฒนา Flow แบบประเมินคุณภาพการส่งมอบสินค้า/บริการ WASTE บน Power Automate |  |  |  | 60d → 57d |  | resources Chakhrit → Chakhrit Kru-Usaha |
| 129 | ทดสอบการเชื่อมต่อระหว่าง Microsoft Form และ Power Automate |  |  |  | 60d → 57d |  | resources Aunchala; Tanchanok; Chakhrit; Sutripat → Aunchala Kengkarunkij; Chakhrit Kru-Usaha; Sutripat Ngamjittrong; Tanchanok Sunsurat; Pornpun Panyapong |
| 130 | พัฒนา List สำหรับจัดเก็บข้อมูลแบบประเมินคุณภาพการส่งมอบสินค้า/บริการ WASTE บน Sharepoint |  |  |  | 60d → 57d |  | resources Chakhrit → Chakhrit Kru-Usaha |
| 131 | ทดสอบการเชื่อมต่อระหว่าง Microsoft Form ,Power Automate และ Sharepoint List |  |  |  | 60d → 57d |  | resources Aunchala; Tanchanok; Chakhrit; Sutripat → Aunchala Kengkarunkij; Chakhrit Kru-Usaha; Sutripat Ngamjittrong; Tanchanok Sunsurat; Pornpun Panyapong |
| 133 | พัฒนา Flow แบบประเมินคุณภาพการส่งมอบสินค้า/บริการ Vendor-N (G.Logistics) บน Power Automate |  |  |  | 60d → 57d |  | resources Chakhrit → Chakhrit Kru-Usaha |
| 134 | ทดสอบการเชื่อมต่อระหว่าง Microsoft Form และ Power Automate |  |  |  | 60d → 57d |  | resources Aunchala; Tanchanok; Chakhrit; Sutripat → Aunchala Kengkarunkij; Chakhrit Kru-Usaha; Sutripat Ngamjittrong; Tanchanok Sunsurat; Pornpun Panyapong |
| 135 | พัฒนา List สำหรับจัดเก็บข้อมูลแบบประเมินคุณภาพการส่งมอบสินค้า/บริการ Vendor-N (G.Logistics) บน Sharepoint |  |  |  | 60d → 57d |  | resources Chakhrit → Chakhrit Kru-Usaha |
| 136 | ทดสอบการเชื่อมต่อระหว่าง Microsoft Form ,Power Automate และ Sharepoint List |  |  |  | 60d → 57d |  | resources Aunchala; Tanchanok; Chakhrit; Sutripat → Aunchala Kengkarunkij; Chakhrit Kru-Usaha; Sutripat Ngamjittrong; Tanchanok Sunsurat; Pornpun Panyapong |
| 138 | พัฒนา Flow แบบประเมินคุณภาพการส่งมอบสินค้า/บริการ Manufacturing_N บน Power Automate |  |  |  | 60d → 57d |  | resources Chakhrit → Chakhrit Kru-Usaha |
| 139 | ทดสอบการเชื่อมต่อระหว่าง Microsoft Form และ Power Automate |  |  |  | 60d → 57d |  | resources Aunchala; Tanchanok; Chakhrit; Sutripat → Aunchala Kengkarunkij; Chakhrit Kru-Usaha; Sutripat Ngamjittrong; Tanchanok Sunsurat; Pornpun Panyapong |
| 140 | พัฒนา List สำหรับจัดเก็บข้อมูลแบบประเมินคุณภาพการส่งมอบสินค้า/บริการ Manufacturing_N บน Sharepoint |  |  |  | 60d → 57d |  | resources Chakhrit → Chakhrit Kru-Usaha |
| 141 | ทดสอบการเชื่อมต่อระหว่าง Microsoft Form ,Power Automate และ Sharepoint List |  |  |  | 60d → 57d |  | resources Aunchala; Tanchanok; Chakhrit; Sutripat → Aunchala Kengkarunkij; Chakhrit Kru-Usaha; Sutripat Ngamjittrong; Tanchanok Sunsurat; Pornpun Panyapong |
| 143 | พัฒนา Flow แบบประเมินคุณภาพการส่งมอบสินค้า/บริการ Commercial บน Power Automate |  |  |  | 60d → 57d |  | resources Chakhrit → Chakhrit Kru-Usaha |
| 144 | ทดสอบการเชื่อมต่อระหว่าง Microsoft Form และ Power Automate |  |  |  | 60d → 57d |  | resources Aunchala; Tanchanok; Chakhrit; Sutripat → Aunchala Kengkarunkij; Chakhrit Kru-Usaha; Sutripat Ngamjittrong; Tanchanok Sunsurat; Pornpun Panyapong |
| 145 | พัฒนา List สำหรับจัดเก็บข้อมูลแบบประเมินคุณภาพการส่งมอบสินค้า/บริการ Commercial บน Sharepoint |  |  |  | 60d → 57d |  | resources Chakhrit → Chakhrit Kru-Usaha |
| 146 | ทดสอบการเชื่อมต่อระหว่าง Microsoft Form ,Power Automate และ Sharepoint List |  |  |  | 60d → 57d |  | resources Aunchala; Tanchanok; Chakhrit; Sutripat → Aunchala Kengkarunkij; Chakhrit Kru-Usaha; Sutripat Ngamjittrong; Tanchanok Sunsurat; Pornpun Panyapong |
| 148 | พัฒนา Flow แบบประเมินคุณภาพการส่งมอบสินค้า/บริการ (Outsource) บน Power Automate |  |  |  | 60d → 57d |  | resources Chakhrit → Chakhrit Kru-Usaha |
| 149 | ทดสอบการเชื่อมต่อระหว่าง Microsoft Form และ Power Automate |  |  |  | 60d → 57d |  | resources Aunchala; Tanchanok; Chakhrit; Sutripat → Aunchala Kengkarunkij; Chakhrit Kru-Usaha; Sutripat Ngamjittrong; Tanchanok Sunsurat; Pornpun Panyapong |
| 150 | พัฒนา List สำหรับจัดเก็บข้อมูลแบบประเมินคุณภาพการส่งมอบสินค้า/บริการ (Outsource) บน Sharepoint |  |  |  | 60d → 57d |  | resources Chakhrit → Chakhrit Kru-Usaha |
| 151 | ทดสอบการเชื่อมต่อระหว่าง Microsoft Form ,Power Automate และ Sharepoint List |  |  |  | 60d → 57d |  | resources Aunchala; Tanchanok; Chakhrit; Sutripat → Aunchala Kengkarunkij; Chakhrit Kru-Usaha; Sutripat Ngamjittrong; Tanchanok Sunsurat; Pornpun Panyapong |
| 153 | พัฒนา Flow แบบประเมินคุณภาพการส่งมอบสินค้า/บริการ RAW MATERIAL บน Power Automate |  |  |  | 36d → 33d |  | resources Chakhrit → Chakhrit Kru-Usaha |
| 154 | ทดสอบการเชื่อมต่อระหว่าง Microsoft Form และ Power Automate |  |  |  | 59d → 56d |  | resources Aunchala; Tanchanok; Chakhrit; Sutripat → Aunchala Kengkarunkij; Chakhrit Kru-Usaha; Sutripat Ngamjittrong; Tanchanok Sunsurat; Pornpun Panyapong |
| 155 | พัฒนา List สำหรับจัดเก็บข้อมูลแบบประเมินคุณภาพการส่งมอบสินค้า/บริการ RAW MATERIAL บน Sharepoint |  |  |  | 59d → 56d |  | resources Chakhrit → Chakhrit Kru-Usaha |
| 156 | ทดสอบการเชื่อมต่อระหว่าง Microsoft Form ,Power Automate และ Sharepoint List |  |  |  | 59d → 56d |  | resources Aunchala; Tanchanok; Chakhrit; Sutripat → Aunchala Kengkarunkij; Chakhrit Kru-Usaha; Sutripat Ngamjittrong; Tanchanok Sunsurat; Pornpun Panyapong |
| 158 | พัฒนา Flow แบบประเมินคุณภาพการส่งมอบสินค้า/บริการ PKG บน Power Automate |  |  |  | 59d → 56d |  | resources Chakhrit → Chakhrit Kru-Usaha |
| 159 | ทดสอบการเชื่อมต่อระหว่าง Microsoft Form และ Power Automate |  |  |  | 59d → 56d |  | resources Aunchala; Tanchanok; Chakhrit; Sutripat → Aunchala Kengkarunkij; Chakhrit Kru-Usaha; Sutripat Ngamjittrong; Tanchanok Sunsurat; Pornpun Panyapong |
| 160 | พัฒนา List สำหรับจัดเก็บข้อมูลแบบประเมินคุณภาพการส่งมอบสินค้า/บริการ PKG บน Sharepoint |  |  |  | 59d → 56d |  | resources Chakhrit → Chakhrit Kru-Usaha |
| 161 | ทดสอบการเชื่อมต่อระหว่าง Microsoft Form ,Power Automate และ Sharepoint List |  |  |  | 59d → 56d |  | resources Aunchala; Tanchanok; Chakhrit; Sutripat → Aunchala Kengkarunkij; Chakhrit Kru-Usaha; Sutripat Ngamjittrong; Tanchanok Sunsurat; Pornpun Panyapong |
| 163 | พัฒนา Flow แบบประเมินคุณภาพการส่งมอบสินค้า/บริการ AGILE บน Power Automate |  |  |  | 59d → 56d |  | resources Chakhrit → Chakhrit Kru-Usaha |
| 164 | ทดสอบการเชื่อมต่อระหว่าง Microsoft Form และ Power Automate |  |  |  | 59d → 56d |  | resources Aunchala; Tanchanok; Chakhrit; Sutripat → Aunchala Kengkarunkij; Chakhrit Kru-Usaha; Sutripat Ngamjittrong; Tanchanok Sunsurat; Pornpun Panyapong |
| 165 | พัฒนา List สำหรับจัดเก็บข้อมูลแบบประเมินคุณภาพการส่งมอบสินค้า/บริการ AGILE บน Sharepoint |  |  |  | 59d → 56d |  | resources Chakhrit → Chakhrit Kru-Usaha |
| 166 | ทดสอบการเชื่อมต่อระหว่าง Microsoft Form ,Power Automate และ Sharepoint List |  |  |  | 59d → 56d |  | resources Aunchala; Tanchanok; Chakhrit; Sutripat → Aunchala Kengkarunkij; Chakhrit Kru-Usaha; Sutripat Ngamjittrong; Tanchanok Sunsurat; Pornpun Panyapong |
| 168 | พัฒนา Flow แบบประเมินคุณภาพการส่งมอบสินค้า/บริการ PROPERTY บน Power Automate |  |  |  | 59d → 56d |  | resources Chakhrit → Chakhrit Kru-Usaha |
| 169 | ทดสอบการเชื่อมต่อระหว่าง Microsoft Form และ Power Automate |  |  |  | 59d → 56d |  | resources Aunchala; Tanchanok; Chakhrit; Sutripat → Aunchala Kengkarunkij; Chakhrit Kru-Usaha; Sutripat Ngamjittrong; Tanchanok Sunsurat; Pornpun Panyapong |
| 170 | พัฒนา List สำหรับจัดเก็บข้อมูลแบบประเมินคุณภาพการส่งมอบสินค้า/บริการ PROPERTY บน Sharepoint |  |  |  | 59d → 56d |  | resources Chakhrit → Chakhrit Kru-Usaha |
| 171 | ทดสอบการเชื่อมต่อระหว่าง Microsoft Form ,Power Automate และ Sharepoint List |  |  |  | 59d → 56d |  | resources Aunchala; Tanchanok; Chakhrit; Sutripat → Aunchala Kengkarunkij; Chakhrit Kru-Usaha; Sutripat Ngamjittrong; Tanchanok Sunsurat; Pornpun Panyapong |
| 173 | พัฒนา Flow แบบประเมินคุณภาพการส่งมอบสินค้า/บริการ ENERGY_CHEMICAL บน Power Automate |  |  |  | 59d → 56d |  | resources Chakhrit → Chakhrit Kru-Usaha |
| 174 | ทดสอบการเชื่อมต่อระหว่าง Microsoft Form และ Power Automate |  |  |  | 59d → 56d |  | resources Aunchala; Tanchanok; Chakhrit; Sutripat → Aunchala Kengkarunkij; Chakhrit Kru-Usaha; Sutripat Ngamjittrong; Tanchanok Sunsurat; Pornpun Panyapong |
| 175 | พัฒนา List สำหรับจัดเก็บข้อมูลแบบประเมินคุณภาพการส่งมอบสินค้า/บริการ ENERGY_CHEMICAL บน Sharepoint |  |  |  | 59d → 56d |  | resources Chakhrit → Chakhrit Kru-Usaha |
| 176 | ทดสอบการเชื่อมต่อระหว่าง Microsoft Form ,Power Automate และ Sharepoint List |  |  |  | 36d → 33d |  | resources Aunchala; Tanchanok; Chakhrit; Sutripat → Aunchala Kengkarunkij; Chakhrit Kru-Usaha; Sutripat Ngamjittrong; Tanchanok Sunsurat; Pornpun Panyapong |
| 177 | พัฒนาโปรแกรมสำหรับดึงข้อมูลจาก Sharepoint List เก็บลง Database |  |  |  | 36d → 33d |  | resources Sutripat → Sutripat Ngamjittrong |
| 178 | ทดสอบการเชื่อมต่อโปรแกรมระหว่าง Sharepoint List และ Database |  |  |  | 36d → 33d |  | resources Sutripat → Sutripat Ngamjittrong |
| 179 | พัฒนา Model ใช้สำหรับนำไปแสดงผลรายงาน |  |  |  | 36d → 33d |  | resources Sutripat → Sutripat Ngamjittrong |
| 180 | พัฒนา Dashboard |  | 2025-07-15 → 2025-07-16 (+1d) |  | 36d → 33d |  | resources Sutripat → Sutripat Ngamjittrong |
| 181 | **จัดทำ Draft Process flow และเอกสารที่เกี่ยวข้อง รองรับกระบวนการใหม่** | 2025-06-17 → 2025-06-04 (-13d) |  | 22d → 30d |  |  |  |
| 182 | จัดทำเอกสาร Business Process Flow | 2025-06-17 → 2025-06-04 (-13d) | 2025-07-08 → 2025-07-07 (-1d) | 16d → 24d |  | 121FS+3d → 60FS-4d | resources Aunchala; Tanchanok; Taravit → Aunchala Kengkarunkij; Junjeera Muanbida; Tanchanok Sunsurat; Taravit Sinpreedee |
| 183 | ส่งมอบ UPM Sign-off และ Draf of ARIS Flow ให้กับหน่วยงาน BPM | 2025-07-09 → 2025-07-08 (-1d) |  |  |  |  | resources Aunchala → Aunchala Kengkarunkij; Tanchanok Sunsurat |
| 184 | จัดเก็บเอกสารเข้าระบบ ISO และส่งมอบเอกสารให้หน่วยงาน BPM |  |  |  |  |  | resources Aunchala; Taravit → Aunchala Kengkarunkij; Junjeera Muanbida; Taravit Sinpreedee |
| 185 | ส่งมอบBPM Sign-off Draft Process Flow และเอกสารที่เกี่ยวข้อง (Milestone #7) |  |  |  |  |  | resources Aunchala → Aunchala Kengkarunkij |
| 186 | ส่งมอบระบบงานที่พัฒนาเรียบร้อยแล้ว (Milestone #8) |  |  |  |  |  | resources Aunchala → Aunchala Kengkarunkij |
| 187 | **Test And Trainning Key User** |  |  | 11d → 10d |  |  |  |
| 188 | จัดเตรียม Environment Test |  |  |  |  |  | resources Tanchanok; Sutripat → Aunchala Kengkarunkij; Sutripat Ngamjittrong |
| 189 | จัดทำเอกสารการฝึกอบรมสำหรับ Key User (Trainng Document) |  |  |  |  |  | resources Tanchanok; Sutripat → Aunchala Kengkarunkij; Sutripat Ngamjittrong |
| 190 | ดำเนินการทดสอบ UAT และ Training |  |  | 6d → 5d |  |  | resources Tanchanok; Sutripat → Aunchala Kengkarunkij; Sutripat Ngamjittrong |
| 191 | แก้ไข Defect จาก UAT |  |  |  |  |  | resources Tanchanok; Sutripat → Aunchala Kengkarunkij; Sutripat Ngamjittrong |
| 192 | UAT Sign-off (Milestone #9) |  |  |  |  |  | resources Aunchala → Aunchala Kengkarunkij |
| 194 | จัดทำแผน Go-Live Plan |  |  |  |  |  | resources Sutripat → Sutripat Ngamjittrong |
| 195 | ตรวจสอบความพร้อมในการ Go-Live (Go/No-Go Checklist) |  |  |  |  |  | resources Sutripat → Sutripat Ngamjittrong |
| 196 | ดำเนินการ Go-Live(Milestone #10) |  |  |  |  |  | resources Sutripat → Sutripat Ngamjittrong |
| 197 | **Stabilization** |  | 2025-08-27 → 2025-08-28 (+1d) |  |  |  |  |
| 198 | สนับสนุนการใช้งาน หลัง Go-Live (หลังจบโครงการ 1 Month) |  | 2025-08-27 → 2025-08-28 (+1d) |  |  |  | resources Sutripat → Sutripat Ngamjittrong |
| 199 | เก็บ Issues Log บน ระบบจริงที่ใช้งาน และแก้ไข |  |  | 15d → 14d |  |  | resources Sutripat → Sutripat Ngamjittrong |
| 201 | จัดทำ Lesson Learned โครงการ |  |  |  |  |  | resources Tanchanok; Sutripat; Aunchala → Aunchala Kengkarunkij; Sutripat Ngamjittrong; Tanchanok Sunsurat; Pornpun Panyapong |
| 202 | ส่งมอบโครงการ สู่งานประจำ (Handover) |  |  |  |  |  | resources Sutripat → Sutripat Ngamjittrong |
| 203 | จัดเก็บเอกสาร Project Files ทั้งหมด |  |  |  |  |  | resources Aunchala; Sutripat → Aunchala Kengkarunkij; Sutripat Ngamjittrong |
| 204 | กำหนดระยะเวลาในการวัด Outcome ของโครงการ (Project KPI) |  |  |  |  |  | resources Aunchala; Sutripat → Aunchala Kengkarunkij; Sutripat Ngamjittrong |

| ID | Task | Other |
| --- | --- | --- |
| 205 | ดำเนินการปิดโครงการ (Milestone #11) | resources Sutripat → Sutripat Ngamjittrong; Aunchala Kengkarunkij |
